# Pikes Peak 2014 2015

How a schedule from GanttProject changed from version to version. A marks actual dates.

## Version 1 (saved 2014-09-03)

Note of the change: Update for github

| ID | WBS | Task | Duration | Start | Finish | Predecessors |
| --- | --- | --- | --- | --- | --- | --- |
| 1 |  | Pikes Peak | 0d | 2015-06-28 | 2015-06-28 |  |
| 2 |  | Autum Sem. | 0d | 2014-08-27 | 2014-08-27 |  |
| 3 |  | Autum Finals | 7d | 2014-12-11 | 2014-12-17 |  |
| 4 |  | Winter Break | 26d | 2014-12-18 | 2015-01-14 |  |
| 5 |  | Spring Sem | 0d | 2015-01-13 | 2015-01-13 |  |
| 6 |  | Spring Finals | 7d | 2015-04-29 | 2015-05-05 |  |
| 7 |  | Summer Break | 0d | 2015-05-04 | 2015-05-04 |  |
| 8 |  | Define Requirements (RW-3) | 3d | 2014-07-13 | 2014-07-15 |  |
| 9 |  | Design System (RW-3) | 4d | 2014-07-16 | 2014-07-19 | 8 |
| 10 | 10 | **Build (RW-3)** | 275d | 2014-07-20 | 2015-04-28 | 9 |
| 11 | 10.1 | **Powertrain** | 224d | 2014-07-20 | 2015-03-08 | 9 |
| 12 |  | Define Requirements (Powertrain) | 33d | 2014-07-20 | 2014-08-21 | 9 |
| 13 |  | Design System (Powertrain) | 7d | 2014-08-22 | 2014-08-28 | 12 |
| 14 | 10.1.3 | **Build (Powertrain)** | 157d | 2014-08-29 | 2015-02-08 | 13 |
| 15 | 10.1.3.1 | **Motor** | 69d | 2014-08-29 | 2014-11-07 | 13 |
| 16 |  | Define Requirements (Motor) | 1d | 2014-08-29 | 2014-08-29 | 13 |
| 17 | 10.1.3.1.2 | **Design System (Motor)** | 8d | 2014-08-30 | 2014-09-07 | 16 |
| 18 |  | Choose Motor | 8d | 2014-08-30 | 2014-09-07 | 16 |
| 19 | 10.1.3.1.3 | **Build (Motor)** | 60d | 2014-09-08 | 2014-11-07 | 17 |
| 20 |  | Purchase Motor | 30d | 2014-09-08 | 2014-10-07 | 17 |
| 21 |  | Recieve Motor | 30d | 2014-10-08 | 2014-11-07 | 20 |
| 22 | 10.1.3.2 | **Motor Controller** | 99d | 2014-08-29 | 2014-12-09 | 13 |
| 23 |  | Define Requirements (M/C) | 1d | 2014-08-29 | 2014-08-29 | 13 |
| 24 | 10.1.3.2.2 | **Design System (M/C)** | 8d | 2014-08-30 | 2014-09-07 | 23 |
| 25 |  | Choose Controller | 8d | 2014-08-30 | 2014-09-07 | 23 |
| 26 | 10.1.3.2.3 | **Build (M/C)** | 90d | 2014-09-08 | 2014-12-09 | 24 |
| 27 |  | Purchase Controller | 30d | 2014-09-08 | 2014-10-07 | 24 |
| 28 |  | Recieve Controller | 30d | 2014-10-08 | 2014-11-07 | 27 |
| 29 |  | Configure Controller to Motor | 30d | 2014-11-08 | 2014-12-09 | 21, 28 |
| 30 | 10.1.3.3 | **Pack** | 157d | 2014-08-29 | 2015-02-08 | 13 |
| 31 |  | Define Requirements (Pack) | 1d | 2014-08-29 | 2014-08-29 | 13 |
| 32 | 10.1.3.3.2 | **Design System (Pack)** | 22d | 2014-08-30 | 2014-09-21 | 31 |
| 33 |  | Choose Battery | 8d | 2014-08-30 | 2014-09-07 | 31 |
| 34 |  | Design Pack | 14d | 2014-09-08 | 2014-09-21 | 33 |
| 35 | 10.1.3.3.3 | **Build (Pack)** | 134d | 2014-09-22 | 2015-02-08 | 32 |
| 36 |  | Purchase Battery | 30d | 2014-09-22 | 2014-10-22 | 32 |
| 37 |  | Recieve Battery | 30d | 2014-10-23 | 2014-11-22 | 36 |
| 38 |  | Test Cells | 14d | 2014-11-23 | 2014-12-07 | 37 |
| 39 |  | Module | 60d | 2014-12-08 | 2015-02-08 | 37, 38 |
| 40 |  | Sense Wiring | 74d | 2014-11-23 | 2015-02-08 | 37, 109 |
| 41 |  | HV bussing | 74d | 2014-11-23 | 2015-02-08 | 37 |
| 42 |  | Final Drive Design | 30d | 2014-09-08 | 2014-10-07 | 13, 18, 25 |
| 43 |  | Cooling | 30d | 2014-09-08 | 2014-10-07 | 13, 18, 25 |
| 44 | 10.1.4 | **Integration Testing (Powertrain)** | 85d | 2014-12-10 | 2015-03-08 |  |
| 45 |  | Test Motor with Controller | 60d | 2014-12-10 | 2015-02-10 | 29, 43, 113, 114, 115, 116, 119, 120 |
| 46 |  | Test Battery with BMS | 30d | 2015-02-06 | 2015-03-08 | 113, 116, 117, 118, 121 |
| 47 | 10.2 | **Chassis** | 236d | 2014-07-20 | 2015-03-20 | 9 |
| 48 |  | Define Requirements (Chassis) | 31d | 2014-07-20 | 2014-08-19 | 9 |
| 49 |  | Design System (Chassis) | 11d | 2014-08-20 | 2014-08-30 | 48 |
| 50 | 10.2.3 | **Build (Chassis)** | 164d | 2014-08-31 | 2015-02-18 |  |
| 51 | 10.2.3.1 | **Frame** | 110d | 2014-08-31 | 2014-12-22 | 49 |
| 52 |  | Define Requirements(Frame) | 1d | 2014-08-31 | 2014-08-31 | 49 |
| 53 | 10.2.3.1.2 | **Design (Frame)** | 35d | 2014-09-02 | 2014-10-06 | 52 |
| 54 |  | Select Frame | 7d | 2014-09-02 | 2014-09-08 |  |
| 55 |  | Purchase Frame | 14d | 2014-09-09 | 2014-09-22 | 54 |
| 56 |  | Get Frame CAD | 14d | 2014-09-09 | 2014-09-22 | 54 |
| 57 |  | CAD rolling chassis | 14d | 2014-09-23 | 2014-10-06 | 56 |
| 58 | 10.2.3.1.3 | **Build (Frame)** | 74d | 2014-10-07 | 2014-12-22 | 53 |
| 59 |  | Frame inspection | 30d | 2014-10-07 | 2014-11-06 | 53 |
| 60 |  | Assemble rolling Chassis | 14d | 2014-11-07 | 2014-11-21 | 55, 59 |
| 61 |  | Assign Chasis Volume | 7d | 2014-10-07 | 2014-10-14 | 56, 57 |
| 62 |  | Place Components [delete] | 1d | 2014-10-15 | 2014-10-15 | 61 |
| 63 |  | Do required rolling Chassis Maintienance | 30d | 2014-11-22 | 2014-12-22 | 60 |
| 64 | 10.2.3.2 | **Mounting Hardware** | 121d | 2014-10-15 | 2015-02-18 | 49, 61 |
| 65 |  | Design Requirements (Mounting) | 14d | 2014-10-15 | 2014-10-28 | 49 |
| 66 | 10.2.3.2.2 | **Design (Mounting)** | 47d | 2014-11-22 | 2015-01-10 | 65, 97 |
| 67 |  | Define Requirements (Battery Frame) | 7d | 2014-11-22 | 2014-11-29 | 34, 65 |
| 68 |  | Design (Battery Frame) | 40d | 2014-11-30 | 2015-01-10 | 67 |
| 69 |  | Define Requirements (Motor Mount) | 7d | 2014-11-22 | 2014-11-29 | 18, 65 |
| 70 |  | Design (Motor Mount) | 40d | 2014-11-30 | 2015-01-10 | 69 |

| ID | WBS | Task | Duration | Start | Finish | Predecessors | Complete |
| --- | --- | --- | --- | --- | --- | --- | --- |
| 71 |  | Define Requirements (Controller Mount) | 7d | 2014-11-22 | 2014-11-29 | 25, 65 |  |
| 72 |  | Design (Controller Mount) | 40d | 2014-11-30 | 2015-01-10 | 71 |  |
| 73 |  | Define Requirements (Fairing Mount) | 7d | 2014-11-22 | 2014-11-29 | 65 |  |
| 74 |  | Design (Fairing Mount) | 14d | 2014-11-30 | 2014-12-13 | 73, 97 |  |
| 75 | 10.2.3.2.3 | **Build (Mounting)** | 37d | 2015-01-11 | 2015-02-18 | 66 |  |
| 76 |  | Check CAD for interference | 7d | 2015-01-11 | 2015-01-17 | 66 |  |
| 77 |  | Build (Battery frame) | 30d | 2015-01-18 | 2015-02-18 | 68, 76 |  |
| 78 |  | Build (Motor Mount) | 30d | 2015-01-18 | 2015-02-18 | 70, 76 |  |
| 79 |  | Build (Controller Mount) | 30d | 2015-01-18 | 2015-02-18 | 72, 76 |  |
| 80 |  | Build (Fairing Mount) | 30d | 2015-01-18 | 2015-02-18 | 74, 76 |  |
| 81 | 10.2.3.3 | **Suspension and Brakes** | 157d | 2014-08-31 | 2015-02-10 | 49 |  |
| 82 |  | Define Requirements (S and B) | 14d | 2014-08-31 | 2014-09-14 | 49 |  |
| 83 | 10.2.3.3.2 | **Design (S and B)** | 44d | 2014-09-15 | 2014-10-29 | 82 |  |
| 84 |  | Choose Suspension | 14d | 2014-09-15 | 2014-09-28 | 82 |  |
| 85 |  | Choose Brakes | 14d | 2014-09-15 | 2014-09-28 | 82 |  |
| 86 |  | Purchase Suspendsion Components | 30d | 2014-09-29 | 2014-10-29 | 84 |  |
| 87 |  | Purchase Brakes | 30d | 2014-09-29 | 2014-10-29 | 85 |  |
| 88 | 10.2.3.3.3 | **Build (S and B)** | 30d | 2015-01-11 | 2015-02-10 |  |  |
| 89 |  | Suspension Testing and Tunning | 30d | 2015-01-11 | 2015-02-10 | 66 |  |
| 90 | 10.2.4 | **Integration Test (Chassis)** | 30d | 2015-02-19 | 2015-03-20 | 50, 51, 64, 81 |  |
| 91 |  | Test Fit mounting hardware | 30d | 2015-02-19 | 2015-03-20 | 50 |  |
| 92 | 10.3 | **Aerodynamics** | 210d | 2014-07-20 | 2015-02-22 | 9 |  |
| 93 |  | Define Requirements (Aero) | 44d | 2014-07-20 | 2014-09-02 | 9 |  |
| 94 | 10.3.2 | **Design System (Aero)** | 99d | 2014-09-03 | 2014-12-13 | 93 |  |
| 95 |  | Decide Fairing Material | 7d | 2014-09-03 | 2014-09-09 | 93 |  |
| 96 |  | Define Fairing Bounding Volume and Shape | 7d | 2014-10-15 | 2014-10-21 | 61 |  |
| 97 |  | Design and CAD Fairing | 30d | 2014-10-22 | 2014-11-21 | 96 |  |
| 98 |  | Purchase Fairing components | 21d | 2014-11-22 | 2014-12-13 | 95, 97 |  |
| 99 | 10.3.3 | **Build (Aero)** | 67d | 2014-12-14 | 2015-02-22 | 94 |  |
| 100 |  | Build Molds | 30d | 2014-12-14 | 2015-01-14 | 98 |  |
| 101 |  | Build Fairings | 30d | 2015-01-15 | 2015-02-14 | 100 |  |
| 102 |  | Paint Fairings | 7d | 2015-02-15 | 2015-02-22 | 101 |  |
| 103 | 10.4 | **Electronics** | 254d | 2014-07-20 | 2015-04-07 | 9 |  |
| 104 |  | Define Requirements (Electronics) | 43d | 2014-07-20 | 2014-08-31 | 9 |  |
| 105 | 10.4.2 | **Design (Electronics)** | 51d | 2014-09-02 | 2014-10-23 | 104 |  |
| 106 |  | Define Data Bus | 7d | 2014-09-02 | 2014-09-08 | 104 |  |
| 107 |  | Define subcomponents | 7d | 2014-09-09 | 2014-09-15 | 104, 106 |  |
| 108 |  | Define connectors | 14d | 2014-09-02 | 2014-09-15 | 104 |  |
| 109 |  | Design Components | 30d | 2014-09-16 | 2014-10-16 | 106, 107 |  |
| 110 |  | Design all Software | 30d | 2014-09-16 | 2014-10-16 | 106, 107 |  |
| 111 |  | Define Dimensions of all hardware | 7d | 2014-10-17 | 2014-10-23 | 61, 108, 109, 110 |  |
| 112 | 10.4.3 | **Buid (Electronics)** | 100d | 2014-10-24 | 2015-02-05 | 105 |  |
| 113 |  | Low Voltaage Power | 45d | 2014-10-24 | 2014-12-09 | 105 |  |
| 114 |  | High Voltage Switching | 45d | 2014-10-24 | 2014-12-09 | 105 |  |
| 115 |  | Rider Interface | 45d | 2014-10-24 | 2014-12-09 |  |  |
| 116 |  | Charging | 45d | 2014-10-24 | 2014-12-09 | 105 |  |
| 117 |  | Battery Managment system | 100d | 2014-10-24 | 2015-02-05 | 105 |  |
| 118 | 10.4.3.6 | **Datalogging** | 100d | 2014-10-24 | 2015-02-05 | 105 |  |
| 119 |  | Data Storage | 45d | 2014-10-24 | 2014-12-09 |  |  |
| 120 |  | m/c telemetry | 45d | 2014-10-24 | 2014-12-09 |  |  |
| 121 |  | Battery Telemetry | 100d | 2014-10-24 | 2015-02-05 |  |  |
| 122 |  | All | 100d | 2014-10-24 | 2015-02-05 |  |  |
| 123 |  | Wiring harness | 100d | 2014-10-24 | 2015-02-05 | 105 |  |
| 124 |  | Balancing | 1d | 2014-08-01 | 2014-08-01 |  |  |
| 125 | 10.4.5 | **Integration Testing (Electronics)** | 60d | 2015-02-06 | 2015-04-07 | 112 |  |
| 126 |  | Software Testing | 30d | 2015-02-06 | 2015-03-08 | 112 | 1% |
| 127 |  | Unit Testing Critical | 30d | 2015-02-06 | 2015-03-08 | 112 |  |
| 128 |  | Full Electrical testing | 30d | 2015-03-09 | 2015-04-07 | 112, 127 |  |
| 129 |  | Mount Powertrain | 21d | 2015-03-09 | 2015-03-29 | 11 |  |
| 130 |  | Mount Electronics | 7d | 2015-04-08 | 2015-04-14 | 103, 129 |  |
| 131 |  | Assemble Full Vehicle | 14d | 2015-04-15 | 2015-04-28 | 47, 92, 129, 130 |  |
| 132 | 11 | **Integration Testing (RW-3)** | 52d | 2015-04-29 | 2015-06-20 | 10 |  |
| 133 |  | First Spin | 7d | 2015-04-29 | 2015-05-05 | 10 |  |
| 134 |  | Vehicle Dyno Testing | 15d | 2015-05-06 | 2015-05-20 | 133 |  |
| 135 |  | Vehicle Road Testing | 30d | 2015-05-21 | 2015-06-20 | 134 |  |

## Version 2 (saved 2014-09-03)

Note of the change: Aero and electronics changes

Last finish stays 2015-06-28.

Changed:

| ID | Task | Start | Finish | Duration | Predecessors |
| --- | --- | --- | --- | --- | --- |
| 46 | Test Battery with BMS |  |  |  | 113, 116, 117, 118, 121 → 113, 116, 117, 118, 121, 124 |
| 47 | **Chassis** |  | 2015-03-20 → 2015-03-19 (-1d) | 236d → 235d |  |
| 50 | **Build (Chassis)** |  | 2015-02-18 → 2015-02-17 (-1d) | 164d → 163d |  |
| 51 | **Frame** |  | 2014-12-22 → 2014-12-21 (-1d) | 110d → 109d |  |
| 53 | **Design (Frame)** |  | 2014-10-06 → 2014-10-05 (-1d) | 35d → 34d |  |
| 54 | Select Frame |  | 2014-09-08 → 2014-09-07 (-1d) | 7d → 6d |  |
| 55 | Purchase Frame | 2014-09-09 → 2014-09-08 (-1d) | 2014-09-22 → 2014-09-21 (-1d) |  |  |
| 56 | Get Frame CAD | 2014-09-09 → 2014-09-08 (-1d) | 2014-09-22 → 2014-09-21 (-1d) |  |  |
| 57 | CAD rolling chassis | 2014-09-23 → 2014-09-22 (-1d) | 2014-10-06 → 2014-10-05 (-1d) |  |  |
| 58 | **Build (Frame)** | 2014-10-07 → 2014-10-06 (-1d) | 2014-12-22 → 2014-12-21 (-1d) |  |  |
| 59 | Frame inspection | 2014-10-07 → 2014-10-06 (-1d) | 2014-11-06 → 2014-11-05 (-1d) |  |  |
| 60 | Assemble rolling Chassis | 2014-11-07 → 2014-11-06 (-1d) | 2014-11-21 → 2014-11-20 (-1d) |  |  |
| 61 | Assign Chasis Volume | 2014-10-07 → 2014-10-06 (-1d) | 2014-10-14 → 2014-10-12 (-2d) |  |  |
| 62 | Place Components [delete] | 2014-10-15 → 2014-10-14 (-1d) | 2014-10-15 → 2014-10-14 (-1d) |  |  |
| 63 | Do required rolling Chassis Maintienance | 2014-11-22 → 2014-11-21 (-1d) | 2014-12-22 → 2014-12-21 (-1d) |  |  |
| 64 | **Mounting Hardware** | 2014-10-15 → 2014-10-14 (-1d) | 2015-02-18 → 2015-02-17 (-1d) |  |  |
| 65 | Design Requirements (Mounting) | 2014-10-15 → 2014-10-14 (-1d) | 2014-10-28 → 2014-10-27 (-1d) |  |  |
| 66 | **Design (Mounting)** | 2014-11-22 → 2014-11-21 (-1d) | 2015-01-10 → 2015-01-09 (-1d) |  |  |
| 67 | Define Requirements (Battery Frame) | 2014-11-22 → 2014-11-21 (-1d) | 2014-11-29 → 2014-11-28 (-1d) |  |  |
| 68 | Design (Battery Frame) | 2014-11-30 → 2014-11-29 (-1d) | 2015-01-10 → 2015-01-09 (-1d) |  |  |
| 69 | Define Requirements (Motor Mount) | 2014-11-22 → 2014-11-21 (-1d) | 2014-11-29 → 2014-11-28 (-1d) |  |  |
| 70 | Design (Motor Mount) | 2014-11-30 → 2014-11-29 (-1d) | 2015-01-10 → 2015-01-09 (-1d) |  |  |
| 71 | Define Requirements (Controller Mount) | 2014-11-22 → 2014-11-21 (-1d) | 2014-11-29 → 2014-11-28 (-1d) |  |  |
| 72 | Design (Controller Mount) | 2014-11-30 → 2014-11-29 (-1d) | 2015-01-10 → 2015-01-09 (-1d) |  |  |
| 73 | Define Requirements (Fairing Mount) | 2014-11-22 → 2014-11-21 (-1d) | 2014-11-29 → 2014-11-28 (-1d) |  |  |
| 74 | Design (Fairing Mount) | 2014-11-30 → 2014-11-29 (-1d) | 2014-12-13 → 2014-12-12 (-1d) |  |  |
| 75 | **Build (Mounting)** | 2015-01-11 → 2015-01-10 (-1d) | 2015-02-18 → 2015-02-17 (-1d) |  |  |
| 76 | Check CAD for interference | 2015-01-11 → 2015-01-10 (-1d) | 2015-01-17 → 2015-01-16 (-1d) |  |  |
| 77 | Build (Battery frame) | 2015-01-18 → 2015-01-17 (-1d) | 2015-02-18 → 2015-02-17 (-1d) |  |  |
| 78 | Build (Motor Mount) | 2015-01-18 → 2015-01-17 (-1d) | 2015-02-18 → 2015-02-17 (-1d) |  |  |
| 79 | Build (Controller Mount) | 2015-01-18 → 2015-01-17 (-1d) | 2015-02-18 → 2015-02-17 (-1d) |  |  |
| 80 | Build (Fairing Mount) | 2015-01-18 → 2015-01-17 (-1d) | 2015-02-18 → 2015-02-17 (-1d) |  |  |
| 81 | **Suspension and Brakes** |  | 2015-02-10 → 2015-02-09 (-1d) | 157d → 156d |  |
| 88 | **Build (S and B)** | 2015-01-11 → 2015-01-10 (-1d) | 2015-02-10 → 2015-02-09 (-1d) |  |  |
| 89 | Suspension Testing and Tunning | 2015-01-11 → 2015-01-10 (-1d) | 2015-02-10 → 2015-02-09 (-1d) |  |  |
| 90 | **Integration Test (Chassis)** | 2015-02-19 → 2015-02-18 (-1d) | 2015-03-20 → 2015-03-19 (-1d) |  |  |
| 91 | Test Fit mounting hardware | 2015-02-19 → 2015-02-18 (-1d) | 2015-03-20 → 2015-03-19 (-1d) |  |  |
| 92 | **Aerodynamics** |  | 2015-02-22 → 2015-02-21 (-1d) | 210d → 209d |  |
| 93 | Define Requirements (Aero) |  | 2014-09-02 → 2014-09-14 (+12d) | 44d → 56d |  |
| 94 | **Design System (Aero)** | 2014-09-03 → 2014-09-15 (+12d) | 2014-12-13 → 2014-12-12 (-1d) | 99d → 86d |  |
| 95 | Decide Fairing Material | 2014-09-03 → 2014-09-15 (+12d) | 2014-09-09 → 2014-09-21 (+12d) |  |  |
| 96 | Define Fairing Bounding Volume and Shape | 2014-10-15 → 2014-10-14 (-1d) | 2014-10-21 → 2014-10-20 (-1d) |  |  |
| 97 | Design and CAD Fairing | 2014-10-22 → 2014-10-21 (-1d) | 2014-11-21 → 2014-11-20 (-1d) |  |  |
| 98 | Purchase Fairing components | 2014-11-22 → 2014-11-21 (-1d) | 2014-12-13 → 2014-12-12 (-1d) |  |  |
| 99 | **Build (Aero)** | 2014-12-14 → 2014-12-13 (-1d) | 2015-02-22 → 2015-02-21 (-1d) |  |  |
| 100 | Build Molds | 2014-12-14 → 2014-12-13 (-1d) | 2015-01-14 → 2015-01-13 (-1d) |  |  |
| 101 | Build Fairings | 2015-01-15 → 2015-01-14 (-1d) | 2015-02-14 → 2015-02-13 (-1d) |  |  |
| 102 | Paint Fairings | 2015-02-15 → 2015-02-14 (-1d) | 2015-02-22 → 2015-02-21 (-1d) |  |  |
| 105 | **Design (Electronics)** |  | 2014-10-23 → 2014-10-22 (-1d) | 51d → 50d |  |
| 106 | Define Data Bus |  | 2014-09-08 → 2014-09-07 (-1d) | 7d → 6d |  |
| 107 | Define subcomponents | 2014-09-09 → 2014-09-08 (-1d) | 2014-09-15 → 2014-09-14 (-1d) |  |  |
| 109 | Design Components | 2014-09-16 → 2014-09-15 (-1d) | 2014-10-16 → 2014-10-15 (-1d) |  |  |
| 110 | Design all Software | 2014-09-16 → 2014-09-15 (-1d) | 2014-10-16 → 2014-10-15 (-1d) |  |  |
| 111 | Define Dimensions of all hardware | 2014-10-17 → 2014-10-16 (-1d) | 2014-10-23 → 2014-10-22 (-1d) |  |  |
| 112 | **Buid (Electronics)** | 2014-10-24 → 2014-10-23 (-1d) |  | 100d → 101d |  |
| 113 | Low Voltaage Power | 2014-10-24 → 2014-10-23 (-1d) | 2014-12-09 → 2014-12-08 (-1d) |  |  |
| 114 | High Voltage Switching | 2014-10-24 → 2014-10-23 (-1d) | 2014-12-09 → 2014-12-08 (-1d) |  |  |
| 116 | Charging | 2014-10-24 → 2014-10-23 (-1d) | 2014-12-09 → 2014-12-08 (-1d) |  |  |
| 117 | Battery Managment system | 2014-10-24 → 2014-10-23 (-1d) | 2015-02-05 → 2015-02-04 (-1d) |  |  |
| 123 | Wiring harness | 2014-10-24 → 2014-10-23 (-1d) | 2015-02-05 → 2015-02-04 (-1d) |  |  |
| 124 | Balancing | 2014-08-01 → 2014-10-23 (+83d) | 2014-08-01 → 2015-02-04 (+187d) | 1d → 100d | none → 111 |

## Version 3 (saved 2014-09-07)

Note of the change: Aero Updates

Last finish stays 2015-06-28.

Added:

| ID | Task | Duration | Start | Finish | Predecessors |
| --- | --- | --- | --- | --- | --- |
| 94 | Ansys Setup | 91d | 2014-07-20 | 2014-10-20 | 9 |
| 95 | Create Aero CAD library | 91d | 2014-07-20 | 2014-10-20 | 9 |
| 96 | RW-2.X redesign | 84d | 2014-07-20 | 2014-10-12 | 9 |
| 98 | Decide Mold Material | 35d | 2014-09-15 | 2014-10-20 |  |

Changed:

| ID | Task | Finish | Duration | Predecessors |
| --- | --- | --- | --- | --- |
| 99 | Decide Fairing Material | 2014-09-21 → 2014-11-20 (+60d) | 7d → 65d |  |
| 100 | Define Fairing Bounding Volume and Shape |  |  | 61 → 61, 96 |
| 101 | Design and CAD Fairing |  |  | 100 → 94, 95, 98, 100 |

## Version 4 (saved 2014-11-02)

Last finish stays 2015-06-28.

Added:

| ID | Task | Duration | Start | Finish | Predecessors |
| --- | --- | --- | --- | --- | --- |
| 85 | Design suspension | 37d | 2014-10-15 | 2014-11-21 | 83 |
| 87 | Build Suspension | 37d | 2014-12-07 | 2015-01-14 | 85, 86 |

Removed: 62 Place Components [delete]; 100 Define Fairing Bounding Volume and Shape

Changed:

| ID | Task | Start | Finish | Duration | Predecessors | Other |
| --- | --- | --- | --- | --- | --- | --- |
| 10 | **Build (RW-3)** |  | 2015-04-28 → 2015-05-03 (+5d) | 275d → 280d |  |  |
| 11 | **Powertrain** |  | 2015-03-08 → 2015-03-13 (+5d) | 224d → 229d |  |  |
| 22 | **Motor Controller** |  | 2014-12-09 → 2014-12-31 (+22d) | 99d → 120d |  |  |
| 26 | **Build (M/C)** |  | 2014-12-09 → 2014-12-31 (+22d) | 90d → 111d |  |  |
| 28 | Recieve Controller |  | 2014-11-07 → 2014-11-30 (+23d) | 30d → 51d |  |  |
| 29 | Configure Controller to Motor | 2014-11-08 → 2014-12-01 (+23d) | 2014-12-09 → 2014-12-31 (+22d) |  |  |  |
| 44 | **Integration Testing (Powertrain)** | 2014-12-10 → 2015-01-02 (+23d) | 2015-03-08 → 2015-03-13 (+5d) | 85d → 69d |  |  |
| 45 | Test Motor with Controller | 2014-12-10 → 2015-01-02 (+23d) | 2015-02-10 → 2015-03-04 (+22d) |  | 29, 43, 117, 118, 119, 120, 123, 124 → 29, 43, 117, 118, 119, 123, 124 |  |
| 46 | Test Battery with BMS | 2015-02-06 → 2015-02-11 (+5d) | 2015-03-08 → 2015-03-13 (+5d) |  |  |  |
| 47 | **Chassis** |  | 2015-03-19 → 2015-03-26 (+7d) | 235d → 242d |  |  |
| 50 | **Build (Chassis)** |  | 2015-02-17 → 2015-02-24 (+7d) | 163d → 170d | none → 49 |  |
| 61 | Assign Chasis Volume |  | 2014-10-12 → 2014-10-20 (+8d) | 7d → 14d |  |  |
| 63 | **Mounting Hardware** | 2014-10-14 → 2014-10-21 (+7d) | 2015-02-17 → 2015-02-24 (+7d) |  |  |  |
| 64 | Design Requirements (Mounting) | 2014-10-14 → 2014-10-21 (+7d) | 2014-10-27 → 2014-11-26 (+30d) | 14d → 36d |  |  |
| 65 | **Design (Mounting)** | 2014-11-21 → 2014-11-29 (+8d) | 2015-01-09 → 2015-01-16 (+7d) |  |  |  |
| 66 | Define Requirements (Battery Frame) | 2014-11-21 → 2014-11-29 (+8d) | 2014-11-28 → 2014-12-05 (+7d) |  |  |  |
| 67 | Design (Battery Frame) | 2014-11-29 → 2014-12-06 (+7d) | 2015-01-09 → 2015-01-16 (+7d) |  |  |  |
| 68 | Define Requirements (Motor Mount) | 2014-11-21 → 2014-11-29 (+8d) | 2014-11-28 → 2014-12-05 (+7d) |  |  |  |
| 69 | Design (Motor Mount) | 2014-11-29 → 2014-12-06 (+7d) | 2015-01-09 → 2015-01-16 (+7d) |  |  |  |
| 70 | Define Requirements (Controller Mount) | 2014-11-21 → 2014-11-29 (+8d) | 2014-11-28 → 2014-12-05 (+7d) |  |  |  |
| 71 | Design (Controller Mount) | 2014-11-29 → 2014-12-06 (+7d) | 2015-01-09 → 2015-01-16 (+7d) |  |  |  |
| 72 | Define Requirements (Fairing Mount) | 2014-11-21 → 2014-11-29 (+8d) | 2014-11-28 → 2014-12-05 (+7d) |  |  |  |
| 73 | Design (Fairing Mount) | 2014-11-29 → 2014-12-06 (+7d) | 2014-12-12 → 2014-12-19 (+7d) |  |  |  |
| 74 | **Build (Mounting)** | 2015-01-10 → 2015-01-17 (+7d) | 2015-02-17 → 2015-02-24 (+7d) |  |  |  |
| 75 | Check CAD for interference | 2015-01-10 → 2015-01-17 (+7d) | 2015-01-16 → 2015-01-24 (+8d) |  |  |  |
| 76 | Build (Battery frame) | 2015-01-17 → 2015-01-25 (+8d) | 2015-02-17 → 2015-02-24 (+7d) |  |  |  |
| 77 | Build (Motor Mount) | 2015-01-17 → 2015-01-25 (+8d) | 2015-02-17 → 2015-02-24 (+7d) |  |  |  |
| 78 | Build (Controller Mount) | 2015-01-17 → 2015-01-25 (+8d) | 2015-02-17 → 2015-02-24 (+7d) |  |  |  |
| 79 | Build (Fairing Mount) | 2015-01-17 → 2015-01-25 (+8d) | 2015-02-17 → 2015-02-24 (+7d) |  |  |  |
| 80 | **Suspension and Brakes** |  | 2015-02-09 → 2015-02-17 (+8d) | 156d → 163d |  |  |
| 82 | **Design (S and B)** |  | 2014-10-29 → 2015-01-14 (+77d) | 44d → 117d |  |  |
| 83 | Choose Suspension |  | 2014-09-28 → 2014-10-14 (+16d) | 14d → 29d |  |  |
| 84 | Choose Brakes |  | 2014-09-28 → 2014-10-14 (+16d) | 14d → 29d |  |  |
| 86 | Purchase Suspendsion Components (finish design) | 2014-09-29 → 2014-11-22 (+54d) | 2014-10-29 → 2014-12-06 (+38d) | 30d → 14d | 83 → 83, 85 | was named Purchase Suspendsion Components |
| 88 | Purchase Brakes | 2014-09-29 → 2014-10-15 (+16d) | 2014-10-29 → 2014-11-14 (+16d) |  |  |  |
| 89 | **Build (S and B)** | 2015-01-10 → 2015-01-17 (+7d) | 2015-02-09 → 2015-02-17 (+8d) |  |  |  |
| 90 | Suspension Testing and Tunning | 2015-01-10 → 2015-01-17 (+7d) | 2015-02-09 → 2015-02-17 (+8d) |  | 65 → 65, 87 |  |
| 91 | **Integration Test (Chassis)** | 2015-02-18 → 2015-02-25 (+7d) | 2015-03-19 → 2015-03-26 (+7d) |  |  |  |
| 92 | Test Fit mounting hardware | 2015-02-18 → 2015-02-25 (+7d) | 2015-03-19 → 2015-03-26 (+7d) |  |  |  |
| 93 | **Aerodynamics** |  | 2015-02-21 → 2015-02-28 (+7d) | 209d → 216d |  |  |
| 97 | RW-2.X redesign |  | 2014-10-12 → 2014-10-20 (+8d) | 84d → 91d |  |  |
| 98 | **Design System (Aero)** |  | 2014-12-12 → 2014-12-19 (+7d) | 86d → 93d |  |  |
| 101 | Design and CAD Fairing |  | 2014-11-20 → 2014-11-28 (+8d) | 30d → 37d | 95, 96, 99, Define Fairing Bounding Volume and Shape → 95, 96, 99 |  |
| 102 | Purchase Fairing components | 2014-11-21 → 2014-11-29 (+8d) | 2014-12-12 → 2014-12-19 (+7d) |  |  |  |
| 103 | **Build (Aero)** | 2014-12-13 → 2014-12-20 (+7d) | 2015-02-21 → 2015-02-28 (+7d) |  |  |  |
| 104 | Build Molds | 2014-12-13 → 2014-12-20 (+7d) | 2015-01-13 → 2015-01-21 (+8d) |  |  |  |
| 105 | Build Fairings | 2015-01-14 → 2015-01-22 (+8d) | 2015-02-13 → 2015-02-21 (+8d) |  |  |  |
| 106 | Paint Fairings | 2015-02-14 → 2015-02-22 (+8d) | 2015-02-21 → 2015-02-28 (+7d) |  |  |  |
| 107 | **Electronics** |  | 2015-04-07 → 2015-04-12 (+5d) | 254d → 259d |  |  |
| 109 | **Design (Electronics)** |  | 2014-10-22 → 2014-10-28 (+6d) | 50d → 56d |  |  |
| 113 | Design Components |  | 2014-10-15 → 2014-10-21 (+6d) | 30d → 36d |  |  |
| 114 | Design all Software |  | 2014-10-15 → 2014-10-21 (+6d) | 30d → 36d |  |  |
| 115 | Define Dimensions of all hardware | 2014-10-16 → 2014-10-22 (+6d) | 2014-10-22 → 2014-10-28 (+6d) |  |  |  |
| 116 | **Buid (Electronics)** | 2014-10-23 → 2014-10-29 (+6d) | 2015-02-05 → 2015-02-10 (+5d) | 101d → 100d |  |  |
| 117 | Low Voltaage Power | 2014-10-23 → 2014-10-29 (+6d) | 2014-12-08 → 2014-12-14 (+6d) |  |  |  |
| 118 | High Voltage Switching | 2014-10-23 → 2014-10-29 (+6d) | 2014-12-08 → 2014-12-14 (+6d) |  |  |  |
| 119 | Rider Interface | 2014-10-24 → 2014-10-29 (+5d) | 2014-12-09 → 2014-12-14 (+5d) |  | none → 115 |  |
| 120 | Charging | 2014-10-23 → 2014-10-29 (+6d) | 2014-12-08 → 2015-02-09 (+63d) | 45d → 99d |  |  |
| 121 | Battery Managment system | 2014-10-23 → 2014-10-29 (+6d) | 2015-02-04 → 2015-02-10 (+6d) |  |  |  |
| 122 | **Datalogging** | 2014-10-24 → 2014-10-29 (+5d) | 2015-02-05 → 2015-02-10 (+5d) |  | 109 → 109, 115 |  |
| 123 | Data Storage | 2014-10-24 → 2014-10-29 (+5d) | 2014-12-09 → 2014-12-14 (+5d) |  | none → 115 |  |
| 124 | m/c telemetry | 2014-10-24 → 2014-10-29 (+5d) | 2014-12-09 → 2014-12-14 (+5d) |  | none → 115 |  |
| 125 | Battery Telemetry | 2014-10-24 → 2014-10-29 (+5d) | 2015-02-05 → 2015-02-10 (+5d) |  | none → 115 |  |
| 126 | All | 2014-10-24 → 2014-10-29 (+5d) | 2015-02-05 → 2015-02-10 (+5d) |  | none → 115 |  |
| 127 | Wiring harness | 2014-10-23 → 2014-10-29 (+6d) | 2015-02-04 → 2015-02-10 (+6d) |  |  |  |
| 128 | Balancing | 2014-10-23 → 2014-10-29 (+6d) | 2015-02-04 → 2015-02-10 (+6d) |  |  |  |
| 129 | **Integration Testing (Electronics)** | 2015-02-06 → 2015-02-11 (+5d) | 2015-04-07 → 2015-04-12 (+5d) |  |  |  |
| 130 | Software Testing | 2015-02-06 → 2015-02-11 (+5d) | 2015-03-08 → 2015-03-13 (+5d) |  |  |  |
| 131 | Unit Testing Critical | 2015-02-06 → 2015-02-11 (+5d) | 2015-03-08 → 2015-03-13 (+5d) |  |  |  |
| 132 | Full Electrical testing | 2015-03-09 → 2015-03-14 (+5d) | 2015-04-07 → 2015-04-12 (+5d) |  |  |  |

| ID | Task | Start | Finish | Predecessors |
| --- | --- | --- | --- | --- |
| 133 | Mount Powertrain | 2015-03-09 → 2015-03-14 (+5d) | 2015-03-29 → 2015-04-03 (+5d) | 11 → 11, 62 |
| 134 | Mount Electronics | 2015-04-08 → 2015-04-13 (+5d) | 2015-04-14 → 2015-04-19 (+5d) |  |
| 135 | Assemble Full Vehicle | 2015-04-15 → 2015-04-20 (+5d) | 2015-04-28 → 2015-05-03 (+5d) |  |
| 136 | **Integration Testing (RW-3)** | 2015-04-29 → 2015-05-04 (+5d) | 2015-06-20 → 2015-06-25 (+5d) |  |
| 137 | First Spin | 2015-04-29 → 2015-05-04 (+5d) | 2015-05-05 → 2015-05-10 (+5d) |  |
| 138 | Vehicle Dyno Testing | 2015-05-06 → 2015-05-11 (+5d) | 2015-05-20 → 2015-05-26 (+6d) |  |
| 139 | Vehicle Road Testing | 2015-05-21 → 2015-05-27 (+6d) | 2015-06-20 → 2015-06-25 (+5d) |  |

## Version 5 (saved 2014-11-09)

Note of the change: Updated Battery Timeline

Last finish stays 2015-06-28.

Added:

| ID | Task | Duration | Start | Finish | Predecessors |
| --- | --- | --- | --- | --- | --- |
| 33 | Test Sample Cells | 7d | 2014-11-09 | 2014-11-16 |  |
| 34 | Choose Cells | 2d | 2014-11-17 | 2014-11-18 | 33 |
| 35 | Order Cells | 5d | 2014-11-19 | 2014-11-23 | 34 |
| 36 | Design Cell Test Procedue | 14d | 2014-11-09 | 2014-11-23 |  |
| 37 | Module Layout | 14d | 2014-11-09 | 2014-11-23 |  |
| 39 | Recieve Cells | 13d | 2014-11-24 | 2014-12-07 | 35 |
| 41 | Build Test Cell Fixture | 13d | 2014-11-24 | 2014-12-07 | 36 |
| 42 | Finalize Module Design | 20d | 2014-12-08 | 2014-12-28 | 40 |
| 44 | Build Module | 40d | 2014-12-30 | 2015-02-09 | 39, 42, 43 |
| 65 | Place Components [delete] | 1d | 2014-10-14 | 2014-10-14 | 64 |
| 103 | Define Fairing Bounding Volume and Shape | 7d | 2014-10-14 | 2014-10-20 | 64, 99 |

Removed: 33 Choose Battery; 34 Design Pack; 36 Purchase Battery; 37 Recieve Battery; 39 Module; 40 Sense Wiring; 41 HV bussing; 87 Build Suspension

Changed:

| ID | Task | Start | Finish | Duration | Predecessors | Other |
| --- | --- | --- | --- | --- | --- | --- |
| 10 | **Build (RW-3)** |  | 2015-05-03 → 2015-04-28 (-5d) | 280d → 275d |  |  |
| 11 | **Powertrain** |  | 2015-03-13 → 2015-03-08 (-5d) | 229d → 224d |  |  |
| 14 | **Build (Powertrain)** |  | 2015-02-08 → 2015-02-09 (+1d) | 157d → 158d |  |  |
| 22 | **Motor Controller** |  | 2014-12-31 → 2014-12-09 (-22d) | 120d → 99d |  |  |
| 26 | **Build (M/C)** |  | 2014-12-31 → 2014-12-09 (-22d) | 111d → 90d |  |  |
| 28 | Recieve Controller |  | 2014-11-30 → 2014-11-07 (-23d) | 51d → 30d |  |  |
| 29 | Configure Controller to Motor | 2014-12-01 → 2014-11-08 (-23d) | 2014-12-31 → 2014-12-09 (-22d) |  |  |  |
| 30 | **Pack** |  | 2015-02-08 → 2015-02-09 (+1d) | 157d → 158d |  |  |
| 32 | **Design System (Pack)** | 2014-08-30 → 2014-11-09 (+71d) | 2014-09-21 → 2014-11-23 (+63d) | 22d → 14d |  |  |
| 38 | **Build (Pack)** | 2014-09-22 → 2014-11-24 (+63d) | 2015-02-08 → 2014-12-29 (-41d) | 134d → 34d |  |  |
| 40 | Test Prototype Module | 2014-10-15 → 2014-11-24 (+40d) | 2014-11-21 → 2014-12-07 (+16d) | 37d → 13d | 87 → 37 | was named Design suspension |
| 43 | Test Cells | 2014-11-23 → 2014-12-08 (+15d) | 2014-12-07 → 2014-12-29 (+22d) | 14d → 21d | Recieve Battery → 41 |  |
| 47 | **Integration Testing (Powertrain)** | 2015-01-02 → 2014-12-10 (-23d) | 2015-03-13 → 2015-03-08 (-5d) | 69d → 85d |  |  |
| 48 | Test Motor with Controller | 2015-01-02 → 2014-12-10 (-23d) | 2015-03-04 → 2015-02-10 (-22d) |  | 29, 46, 120, 121, 122, 126, 127 → 29, 46, 120, 121, 122, 123, 126, 127 |  |
| 49 | Test Battery with BMS | 2015-02-11 → 2015-02-06 (-5d) | 2015-03-13 → 2015-03-08 (-5d) |  |  |  |
| 50 | **Chassis** |  | 2015-03-26 → 2015-03-19 (-7d) | 242d → 235d |  |  |
| 53 | **Build (Chassis)** |  | 2015-02-24 → 2015-02-17 (-7d) | 170d → 163d | 52 → none |  |
| 64 | Assign Chasis Volume |  | 2014-10-20 → 2014-10-12 (-8d) | 14d → 7d |  |  |
| 67 | **Mounting Hardware** | 2014-10-21 → 2014-10-14 (-7d) | 2015-02-24 → 2015-02-17 (-7d) |  |  |  |
| 68 | Design Requirements (Mounting) | 2014-10-21 → 2014-10-14 (-7d) | 2014-11-26 → 2014-10-27 (-30d) | 36d → 14d |  |  |
| 69 | **Design (Mounting)** | 2014-11-29 → 2014-11-21 (-8d) | 2015-01-16 → 2015-01-09 (-7d) |  |  |  |
| 70 | Define Requirements (Battery Frame) | 2014-11-29 → 2014-11-21 (-8d) | 2014-12-05 → 2014-11-28 (-7d) |  | Design Pack, 68 → 68 |  |
| 71 | Design (Battery Frame) | 2014-12-06 → 2014-11-29 (-7d) | 2015-01-16 → 2015-01-09 (-7d) |  |  |  |
| 72 | Define Requirements (Motor Mount) | 2014-11-29 → 2014-11-21 (-8d) | 2014-12-05 → 2014-11-28 (-7d) |  |  |  |
| 73 | Design (Motor Mount) | 2014-12-06 → 2014-11-29 (-7d) | 2015-01-16 → 2015-01-09 (-7d) |  |  |  |
| 74 | Define Requirements (Controller Mount) | 2014-11-29 → 2014-11-21 (-8d) | 2014-12-05 → 2014-11-28 (-7d) |  |  |  |
| 75 | Design (Controller Mount) | 2014-12-06 → 2014-11-29 (-7d) | 2015-01-16 → 2015-01-09 (-7d) |  |  |  |
| 76 | Define Requirements (Fairing Mount) | 2014-11-29 → 2014-11-21 (-8d) | 2014-12-05 → 2014-11-28 (-7d) |  |  |  |
| 77 | Design (Fairing Mount) | 2014-12-06 → 2014-11-29 (-7d) | 2014-12-19 → 2014-12-12 (-7d) |  |  |  |
| 78 | **Build (Mounting)** | 2015-01-17 → 2015-01-10 (-7d) | 2015-02-24 → 2015-02-17 (-7d) |  |  |  |
| 79 | Check CAD for interference | 2015-01-17 → 2015-01-10 (-7d) | 2015-01-24 → 2015-01-16 (-8d) |  |  |  |
| 80 | Build (Battery frame) | 2015-01-25 → 2015-01-17 (-8d) | 2015-02-24 → 2015-02-17 (-7d) |  |  |  |
| 81 | Build (Motor Mount) | 2015-01-25 → 2015-01-17 (-8d) | 2015-02-24 → 2015-02-17 (-7d) |  |  |  |
| 82 | Build (Controller Mount) | 2015-01-25 → 2015-01-17 (-8d) | 2015-02-24 → 2015-02-17 (-7d) |  |  |  |
| 83 | Build (Fairing Mount) | 2015-01-25 → 2015-01-17 (-8d) | 2015-02-24 → 2015-02-17 (-7d) |  |  |  |
| 84 | **Suspension and Brakes** |  | 2015-02-17 → 2015-02-09 (-8d) | 163d → 156d |  |  |
| 86 | **Design (S and B)** |  | 2015-01-14 → 2014-10-29 (-77d) | 117d → 44d |  |  |
| 87 | Choose Suspension |  | 2014-10-14 → 2014-09-28 (-16d) | 29d → 14d |  |  |
| 88 | Choose Brakes |  | 2014-10-14 → 2014-09-28 (-16d) | 29d → 14d |  |  |
| 89 | Purchase Suspendsion Components | 2014-11-22 → 2014-09-29 (-54d) | 2014-12-06 → 2014-10-29 (-38d) | 14d → 30d | 87, 40 → 87 | was named Purchase Suspendsion Components (finish design) |
| 90 | Purchase Brakes | 2014-10-15 → 2014-09-29 (-16d) | 2014-11-14 → 2014-10-29 (-16d) |  |  |  |
| 91 | **Build (S and B)** | 2015-01-17 → 2015-01-10 (-7d) | 2015-02-17 → 2015-02-09 (-8d) |  |  |  |
| 92 | Suspension Testing and Tunning | 2015-01-17 → 2015-01-10 (-7d) | 2015-02-17 → 2015-02-09 (-8d) |  | 69, Build Suspension → 69 |  |
| 93 | **Integration Test (Chassis)** | 2015-02-25 → 2015-02-18 (-7d) | 2015-03-26 → 2015-03-19 (-7d) |  |  |  |
| 94 | Test Fit mounting hardware | 2015-02-25 → 2015-02-18 (-7d) | 2015-03-26 → 2015-03-19 (-7d) |  |  |  |
| 95 | **Aerodynamics** |  | 2015-02-28 → 2015-02-21 (-7d) | 216d → 209d |  |  |
| 99 | RW-2.X redesign |  | 2014-10-20 → 2014-10-12 (-8d) | 91d → 84d |  |  |
| 100 | **Design System (Aero)** |  | 2014-12-19 → 2014-12-12 (-7d) | 93d → 86d |  |  |
| 104 | Design and CAD Fairing |  | 2014-11-28 → 2014-11-20 (-8d) | 37d → 30d | 97, 98, 101 → 97, 98, 101, 103 |  |
| 105 | Purchase Fairing components | 2014-11-29 → 2014-11-21 (-8d) | 2014-12-19 → 2014-12-12 (-7d) |  |  |  |
| 106 | **Build (Aero)** | 2014-12-20 → 2014-12-13 (-7d) | 2015-02-28 → 2015-02-21 (-7d) |  |  |  |
| 107 | Build Molds | 2014-12-20 → 2014-12-13 (-7d) | 2015-01-21 → 2015-01-13 (-8d) |  |  |  |
| 108 | Build Fairings | 2015-01-22 → 2015-01-14 (-8d) | 2015-02-21 → 2015-02-13 (-8d) |  |  |  |
| 109 | Paint Fairings | 2015-02-22 → 2015-02-14 (-8d) | 2015-02-28 → 2015-02-21 (-7d) |  |  |  |
| 110 | **Electronics** |  | 2015-04-12 → 2015-04-07 (-5d) | 259d → 254d |  |  |
| 112 | **Design (Electronics)** |  | 2014-10-28 → 2014-10-22 (-6d) | 56d → 50d |  |  |
| 116 | Design Components |  | 2014-10-21 → 2014-10-15 (-6d) | 36d → 30d |  |  |
| 117 | Design all Software |  | 2014-10-21 → 2014-10-15 (-6d) | 36d → 30d |  |  |
| 118 | Define Dimensions of all hardware | 2014-10-22 → 2014-10-16 (-6d) | 2014-10-28 → 2014-10-22 (-6d) |  |  |  |
| 119 | **Buid (Electronics)** | 2014-10-29 → 2014-10-23 (-6d) | 2015-02-10 → 2015-02-05 (-5d) | 100d → 101d |  |  |
| 120 | Low Voltaage Power | 2014-10-29 → 2014-10-23 (-6d) | 2014-12-14 → 2014-12-08 (-6d) |  |  |  |
| 121 | High Voltage Switching | 2014-10-29 → 2014-10-23 (-6d) | 2014-12-14 → 2014-12-08 (-6d) |  |  |  |
| 122 | Rider Interface | 2014-10-29 → 2014-10-24 (-5d) | 2014-12-14 → 2014-12-09 (-5d) |  | 118 → none |  |
| 123 | Charging | 2014-10-29 → 2014-10-23 (-6d) | 2015-02-09 → 2014-12-08 (-63d) | 99d → 45d |  |  |
| 124 | Battery Managment system | 2014-10-29 → 2014-10-23 (-6d) | 2015-02-10 → 2015-02-04 (-6d) |  |  |  |
| 125 | **Datalogging** | 2014-10-29 → 2014-10-24 (-5d) | 2015-02-10 → 2015-02-05 (-5d) |  | 112, 118 → 112 |  |
| 126 | Data Storage | 2014-10-29 → 2014-10-24 (-5d) | 2014-12-14 → 2014-12-09 (-5d) |  | 118 → none |  |
| 127 | m/c telemetry | 2014-10-29 → 2014-10-24 (-5d) | 2014-12-14 → 2014-12-09 (-5d) |  | 118 → none |  |
| 128 | Battery Telemetry | 2014-10-29 → 2014-10-24 (-5d) | 2015-02-10 → 2015-02-05 (-5d) |  | 118 → none |  |
| 129 | All | 2014-10-29 → 2014-10-24 (-5d) | 2015-02-10 → 2015-02-05 (-5d) |  | 118 → none |  |

| ID | Task | Start | Finish | Predecessors |
| --- | --- | --- | --- | --- |
| 130 | Wiring harness | 2014-10-29 → 2014-10-23 (-6d) | 2015-02-10 → 2015-02-04 (-6d) |  |
| 131 | Balancing | 2014-10-29 → 2014-10-23 (-6d) | 2015-02-10 → 2015-02-04 (-6d) |  |
| 132 | **Integration Testing (Electronics)** | 2015-02-11 → 2015-02-06 (-5d) | 2015-04-12 → 2015-04-07 (-5d) |  |
| 133 | Software Testing | 2015-02-11 → 2015-02-06 (-5d) | 2015-03-13 → 2015-03-08 (-5d) |  |
| 134 | Unit Testing Critical | 2015-02-11 → 2015-02-06 (-5d) | 2015-03-13 → 2015-03-08 (-5d) |  |
| 135 | Full Electrical testing | 2015-03-14 → 2015-03-09 (-5d) | 2015-04-12 → 2015-04-07 (-5d) |  |
| 136 | Mount Powertrain | 2015-03-14 → 2015-03-09 (-5d) | 2015-04-03 → 2015-03-29 (-5d) | 11, 66 → 11 |
| 137 | Mount Electronics | 2015-04-13 → 2015-04-08 (-5d) | 2015-04-19 → 2015-04-14 (-5d) |  |
| 138 | Assemble Full Vehicle | 2015-04-20 → 2015-04-15 (-5d) | 2015-05-03 → 2015-04-28 (-5d) |  |
| 139 | **Integration Testing (RW-3)** | 2015-05-04 → 2015-04-29 (-5d) | 2015-06-25 → 2015-06-20 (-5d) |  |
| 140 | First Spin | 2015-05-04 → 2015-04-29 (-5d) | 2015-05-10 → 2015-05-05 (-5d) |  |
| 141 | Vehicle Dyno Testing | 2015-05-11 → 2015-05-06 (-5d) | 2015-05-26 → 2015-05-20 (-6d) |  |
| 142 | Vehicle Road Testing | 2015-05-27 → 2015-05-21 (-6d) | 2015-06-25 → 2015-06-20 (-5d) |  |

## Version 6 (saved 2014-11-09)

Note of the change: I FIXED MY MISTAKES. updated battery timeline the right way this time.

Last finish stays 2015-06-28.

Added:

| ID | Task | Duration | Start | Finish | Predecessors |
| --- | --- | --- | --- | --- | --- |
| 36 | Design Cell Test Fixure | 14d | 2014-11-09 | 2014-11-23 |  |
| 41 | Build Test Cell Fixure | 13d | 2014-11-24 | 2014-12-07 | 36 |
| 88 | Design suspension | 37d | 2014-10-15 | 2014-11-21 | 86 |
| 90 | Build Suspension | 37d | 2014-12-07 | 2015-01-14 | 88, 89 |

Removed: 36 Design Cell Test Procedue; 41 Build Test Cell Fixture; 65 Place Components [delete]; 103 Define Fairing Bounding Volume and Shape

Changed:

| ID | Task | Start | Finish | Duration | Predecessors | Other |
| --- | --- | --- | --- | --- | --- | --- |
| 10 | **Build (RW-3)** |  | 2015-04-28 → 2015-05-03 (+5d) | 275d → 280d |  |  |
| 11 | **Powertrain** |  | 2015-03-08 → 2015-03-13 (+5d) | 224d → 229d |  |  |
| 14 | **Build (Powertrain)** |  | 2015-02-09 → 2015-03-11 (+30d) | 158d → 187d |  |  |
| 22 | **Motor Controller** |  | 2014-12-09 → 2014-12-31 (+22d) | 99d → 120d |  |  |
| 26 | **Build (M/C)** |  | 2014-12-09 → 2014-12-31 (+22d) | 90d → 111d |  |  |
| 28 | Recieve Controller |  | 2014-11-07 → 2014-11-30 (+23d) | 30d → 51d |  |  |
| 29 | Configure Controller to Motor | 2014-11-08 → 2014-12-01 (+23d) | 2014-12-09 → 2014-12-31 (+22d) |  |  |  |
| 30 | **Pack** |  | 2015-02-09 → 2015-02-08 (-1d) | 158d → 157d |  |  |
| 32 | **Design System (Pack)** | 2014-11-09 → 2014-08-30 (-71d) | 2014-11-23 → 2014-09-21 (-63d) | 14d → 22d |  |  |
| 38 | **Build (Pack)** | 2014-11-24 → 2014-09-22 (-63d) | 2014-12-29 → 2015-02-08 (+41d) | 34d → 134d |  |  |
| 42 | Finalize Module Layout |  |  |  |  | was named Finalize Module Design |
| 43 | Test Cells |  |  |  | Build Test Cell Fixture → 41 |  |
| 44 | Build Module | 2014-12-30 → 2014-12-29 (-1d) | 2015-02-09 → 2015-02-08 (-1d) |  | 39, 42, 43 → 42 |  |
| 45 | Final Drive Design | 2014-09-08 → 2015-02-09 (+154d) | 2014-10-07 → 2015-03-11 (+155d) |  | 13, 18, 25 → 13, 18, 25, 44 |  |
| 47 | **Integration Testing (Powertrain)** | 2014-12-10 → 2015-01-02 (+23d) | 2015-03-08 → 2015-03-13 (+5d) | 85d → 69d |  |  |
| 48 | Test Motor with Controller | 2014-12-10 → 2015-01-02 (+23d) | 2015-02-10 → 2015-03-04 (+22d) |  | 29, 46, 120, 121, 122, 123, 126, 127 → 29, 46, 120, 121, 122, 126, 127 |  |
| 49 | Test Battery with BMS | 2015-02-06 → 2015-02-11 (+5d) | 2015-03-08 → 2015-03-13 (+5d) |  |  |  |
| 50 | **Chassis** |  | 2015-03-19 → 2015-03-26 (+7d) | 235d → 242d |  |  |
| 53 | **Build (Chassis)** |  | 2015-02-17 → 2015-02-24 (+7d) | 163d → 170d | none → 52 |  |
| 64 | Assign Chasis Volume |  | 2014-10-12 → 2014-10-20 (+8d) | 7d → 14d |  |  |
| 66 | **Mounting Hardware** | 2014-10-14 → 2014-10-21 (+7d) | 2015-02-17 → 2015-02-24 (+7d) |  |  |  |
| 67 | Design Requirements (Mounting) | 2014-10-14 → 2014-10-21 (+7d) | 2014-10-27 → 2014-11-26 (+30d) | 14d → 36d |  |  |
| 68 | **Design (Mounting)** | 2014-11-21 → 2014-11-29 (+8d) | 2015-01-09 → 2015-01-16 (+7d) |  |  |  |
| 69 | Define Requirements (Battery Frame) | 2014-11-21 → 2014-11-29 (+8d) | 2014-11-28 → 2014-12-05 (+7d) |  |  |  |
| 70 | Design (Battery Frame) | 2014-11-29 → 2014-12-06 (+7d) | 2015-01-09 → 2015-01-16 (+7d) |  |  |  |
| 71 | Define Requirements (Motor Mount) | 2014-11-21 → 2014-11-29 (+8d) | 2014-11-28 → 2014-12-05 (+7d) |  |  |  |
| 72 | Design (Motor Mount) | 2014-11-29 → 2014-12-06 (+7d) | 2015-01-09 → 2015-01-16 (+7d) |  |  |  |
| 73 | Define Requirements (Controller Mount) | 2014-11-21 → 2014-11-29 (+8d) | 2014-11-28 → 2014-12-05 (+7d) |  |  |  |
| 74 | Design (Controller Mount) | 2014-11-29 → 2014-12-06 (+7d) | 2015-01-09 → 2015-01-16 (+7d) |  |  |  |
| 75 | Define Requirements (Fairing Mount) | 2014-11-21 → 2014-11-29 (+8d) | 2014-11-28 → 2014-12-05 (+7d) |  |  |  |
| 76 | Design (Fairing Mount) | 2014-11-29 → 2014-12-06 (+7d) | 2014-12-12 → 2014-12-19 (+7d) |  |  |  |
| 77 | **Build (Mounting)** | 2015-01-10 → 2015-01-17 (+7d) | 2015-02-17 → 2015-02-24 (+7d) |  |  |  |
| 78 | Check CAD for interference | 2015-01-10 → 2015-01-17 (+7d) | 2015-01-16 → 2015-01-24 (+8d) |  |  |  |
| 79 | Build (Battery frame) | 2015-01-17 → 2015-01-25 (+8d) | 2015-02-17 → 2015-02-24 (+7d) |  |  |  |
| 80 | Build (Motor Mount) | 2015-01-17 → 2015-01-25 (+8d) | 2015-02-17 → 2015-02-24 (+7d) |  |  |  |
| 81 | Build (Controller Mount) | 2015-01-17 → 2015-01-25 (+8d) | 2015-02-17 → 2015-02-24 (+7d) |  |  |  |
| 82 | Build (Fairing Mount) | 2015-01-17 → 2015-01-25 (+8d) | 2015-02-17 → 2015-02-24 (+7d) |  |  |  |
| 83 | **Suspension and Brakes** |  | 2015-02-09 → 2015-02-17 (+8d) | 156d → 163d |  |  |
| 85 | **Design (S and B)** |  | 2014-10-29 → 2015-01-14 (+77d) | 44d → 117d |  |  |
| 86 | Choose Suspension |  | 2014-09-28 → 2014-10-14 (+16d) | 14d → 29d |  |  |
| 87 | Choose Brakes |  | 2014-09-28 → 2014-10-14 (+16d) | 14d → 29d |  |  |
| 89 | Purchase Suspendsion Components (finish design) | 2014-09-29 → 2014-11-22 (+54d) | 2014-10-29 → 2014-12-06 (+38d) | 30d → 14d | 86 → 86, 88 | was named Purchase Suspendsion Components |
| 91 | Purchase Brakes | 2014-09-29 → 2014-10-15 (+16d) | 2014-10-29 → 2014-11-14 (+16d) |  |  |  |
| 92 | **Build (S and B)** | 2015-01-10 → 2015-01-17 (+7d) | 2015-02-09 → 2015-02-17 (+8d) |  |  |  |
| 93 | Suspension Testing and Tunning | 2015-01-10 → 2015-01-17 (+7d) | 2015-02-09 → 2015-02-17 (+8d) |  | 68 → 68, 90 |  |
| 94 | **Integration Test (Chassis)** | 2015-02-18 → 2015-02-25 (+7d) | 2015-03-19 → 2015-03-26 (+7d) |  |  |  |
| 95 | Test Fit mounting hardware | 2015-02-18 → 2015-02-25 (+7d) | 2015-03-19 → 2015-03-26 (+7d) |  |  |  |
| 96 | **Aerodynamics** |  | 2015-02-21 → 2015-02-28 (+7d) | 209d → 216d |  |  |
| 100 | RW-2.X redesign |  | 2014-10-12 → 2014-10-20 (+8d) | 84d → 91d |  |  |
| 101 | **Design System (Aero)** |  | 2014-12-12 → 2014-12-19 (+7d) | 86d → 93d |  |  |
| 104 | Design and CAD Fairing |  | 2014-11-20 → 2014-11-28 (+8d) | 30d → 37d | 98, 99, 102, Define Fairing Bounding Volume and Shape → 98, 99, 102 |  |
| 105 | Purchase Fairing components | 2014-11-21 → 2014-11-29 (+8d) | 2014-12-12 → 2014-12-19 (+7d) |  |  |  |
| 106 | **Build (Aero)** | 2014-12-13 → 2014-12-20 (+7d) | 2015-02-21 → 2015-02-28 (+7d) |  |  |  |
| 107 | Build Molds | 2014-12-13 → 2014-12-20 (+7d) | 2015-01-13 → 2015-01-21 (+8d) |  |  |  |
| 108 | Build Fairings | 2015-01-14 → 2015-01-22 (+8d) | 2015-02-13 → 2015-02-21 (+8d) |  |  |  |
| 109 | Paint Fairings | 2015-02-14 → 2015-02-22 (+8d) | 2015-02-21 → 2015-02-28 (+7d) |  |  |  |
| 110 | **Electronics** |  | 2015-04-07 → 2015-04-12 (+5d) | 254d → 259d |  |  |
| 112 | **Design (Electronics)** |  | 2014-10-22 → 2014-10-28 (+6d) | 50d → 56d |  |  |
| 116 | Design Components |  | 2014-10-15 → 2014-10-21 (+6d) | 30d → 36d |  |  |
| 117 | Design all Software |  | 2014-10-15 → 2014-10-21 (+6d) | 30d → 36d |  |  |
| 118 | Define Dimensions of all hardware | 2014-10-16 → 2014-10-22 (+6d) | 2014-10-22 → 2014-10-28 (+6d) |  |  |  |
| 119 | **Buid (Electronics)** | 2014-10-23 → 2014-10-29 (+6d) | 2015-02-05 → 2015-02-10 (+5d) | 101d → 100d |  |  |
| 120 | Low Voltaage Power | 2014-10-23 → 2014-10-29 (+6d) | 2014-12-08 → 2014-12-14 (+6d) |  |  |  |
| 121 | High Voltage Switching | 2014-10-23 → 2014-10-29 (+6d) | 2014-12-08 → 2014-12-14 (+6d) |  |  |  |
| 122 | Rider Interface | 2014-10-24 → 2014-10-29 (+5d) | 2014-12-09 → 2014-12-14 (+5d) |  | none → 118 |  |
| 123 | Charging | 2014-10-23 → 2014-10-29 (+6d) | 2014-12-08 → 2015-02-09 (+63d) | 45d → 99d |  |  |
| 124 | Battery Managment system | 2014-10-23 → 2014-10-29 (+6d) | 2015-02-04 → 2015-02-10 (+6d) |  |  |  |
| 125 | **Datalogging** | 2014-10-24 → 2014-10-29 (+5d) | 2015-02-05 → 2015-02-10 (+5d) |  | 112 → 112, 118 |  |
| 126 | Data Storage | 2014-10-24 → 2014-10-29 (+5d) | 2014-12-09 → 2014-12-14 (+5d) |  | none → 118 |  |
| 127 | m/c telemetry | 2014-10-24 → 2014-10-29 (+5d) | 2014-12-09 → 2014-12-14 (+5d) |  | none → 118 |  |

| ID | Task | Start | Finish | Predecessors |
| --- | --- | --- | --- | --- |
| 128 | Battery Telemetry | 2014-10-24 → 2014-10-29 (+5d) | 2015-02-05 → 2015-02-10 (+5d) | none → 118 |
| 129 | All | 2014-10-24 → 2014-10-29 (+5d) | 2015-02-05 → 2015-02-10 (+5d) | none → 118 |
| 130 | Wiring harness | 2014-10-23 → 2014-10-29 (+6d) | 2015-02-04 → 2015-02-10 (+6d) |  |
| 131 | Balancing | 2014-10-23 → 2014-10-29 (+6d) | 2015-02-04 → 2015-02-10 (+6d) |  |
| 132 | **Integration Testing (Electronics)** | 2015-02-06 → 2015-02-11 (+5d) | 2015-04-07 → 2015-04-12 (+5d) |  |
| 133 | Software Testing | 2015-02-06 → 2015-02-11 (+5d) | 2015-03-08 → 2015-03-13 (+5d) |  |
| 134 | Unit Testing Critical | 2015-02-06 → 2015-02-11 (+5d) | 2015-03-08 → 2015-03-13 (+5d) |  |
| 135 | Full Electrical testing | 2015-03-09 → 2015-03-14 (+5d) | 2015-04-07 → 2015-04-12 (+5d) |  |
| 136 | Mount Powertrain | 2015-03-09 → 2015-03-14 (+5d) | 2015-03-29 → 2015-04-03 (+5d) | 11 → 11, 65 |
| 137 | Mount Electronics | 2015-04-08 → 2015-04-13 (+5d) | 2015-04-14 → 2015-04-19 (+5d) |  |
| 138 | Assemble Full Vehicle | 2015-04-15 → 2015-04-20 (+5d) | 2015-04-28 → 2015-05-03 (+5d) |  |
| 139 | **Integration Testing (RW-3)** | 2015-04-29 → 2015-05-04 (+5d) | 2015-06-20 → 2015-06-25 (+5d) |  |
| 140 | First Spin | 2015-04-29 → 2015-05-04 (+5d) | 2015-05-05 → 2015-05-10 (+5d) |  |
| 141 | Vehicle Dyno Testing | 2015-05-06 → 2015-05-11 (+5d) | 2015-05-20 → 2015-05-26 (+6d) |  |
| 142 | Vehicle Road Testing | 2015-05-21 → 2015-05-27 (+6d) | 2015-06-20 → 2015-06-25 (+5d) |  |
