# Pikes Peak 2014 2015

How a schedule from GanttProject changed from version to version. A marks actual dates.

## Version 1 (saved 2014-08-29)

Note of the change: WBS

| ID | WBS | Task | Duration | Start | Finish | Predecessors |
| --- | --- | --- | --- | --- | --- | --- |
| 1 |  | Pikes Peak | 0d | 2015-06-28 | 2015-06-28 |  |
| 2 |  | Autum Sem. | 0d | 2014-08-27 | 2014-08-27 |  |
| 3 |  | Autum Finals | 7d | 2014-12-11 | 2014-12-17 |  |
| 4 |  | Winter Break | 26d | 2014-12-18 | 2015-01-14 |  |
| 5 |  | Spring Sem | 0d | 2015-01-13 | 2015-01-13 |  |
| 6 |  | Spring Finals | 7d | 2015-04-29 | 2015-05-05 |  |
| 7 |  | Summer Break | 0d | 2015-05-04 | 2015-05-04 |  |
| 8 |  | Define Requirements (RW-3) | 3d | 2014-07-13 | 2014-07-15 |  |
| 9 |  | Design System (RW-3) | 4d | 2014-07-16 | 2014-07-19 | 8 |
| 10 | 10 | **Build (RW-3)** | 307d | 2014-07-20 | 2015-05-31 | 9 |
| 11 | 10.1 | **Powertrain** | 272d | 2014-07-20 | 2015-04-25 | 9 |
| 12 |  | Define Requirements (Powertrain) | 33d | 2014-07-20 | 2014-08-21 | 9 |
| 13 |  | Design System (Powertrain) | 7d | 2014-08-22 | 2014-08-28 | 12 |
| 14 | 10.1.3 | **Build (Powertrain)** | 90d | 2014-08-29 | 2014-11-30 | 13 |
| 15 | 10.1.3.1 | **Motor** | 30d | 2014-08-29 | 2014-09-28 | 13 |
| 16 |  | Define Requirements (Motor) | 1d | 2014-08-29 | 2014-08-29 | 13 |
| 17 | 10.1.3.1.2 | **Design System (Motor)** | 8d | 2014-08-30 | 2014-09-07 | 16 |
| 18 |  | Choose Motor | 8d | 2014-08-30 | 2014-09-07 | 16 |
| 19 | 10.1.3.1.3 | **Build (Motor)** | 21d | 2014-09-08 | 2014-09-28 | 17 |
| 20 |  | Purchase Motor | 7d | 2014-09-08 | 2014-09-14 | 17 |
| 21 |  | Recieve Motor | 14d | 2014-09-15 | 2014-09-28 | 20 |
| 22 | 10.1.3.2 | **Motor Controller** | 60d | 2014-08-29 | 2014-10-29 | 13 |
| 23 |  | Define Requirements (M/C) | 1d | 2014-08-29 | 2014-08-29 | 13 |
| 24 | 10.1.3.2.2 | **Design System (M/C)** | 8d | 2014-08-30 | 2014-09-07 | 23 |
| 25 |  | Choose Controller | 8d | 2014-08-30 | 2014-09-07 | 23 |
| 26 | 10.1.3.2.3 | **Build (M/C)** | 51d | 2014-09-08 | 2014-10-29 | 24 |
| 27 |  | Purchase Controller | 7d | 2014-09-08 | 2014-09-14 | 24 |
| 28 |  | Recieve Controller | 14d | 2014-09-15 | 2014-09-28 | 27 |
| 29 |  | Configure Controller to Motor | 30d | 2014-09-29 | 2014-10-29 | 28 |
| 30 | 10.1.3.3 | **Pack** | 88d | 2014-08-29 | 2014-11-28 | 13 |
| 31 |  | Define Requirements (Pack) | 1d | 2014-08-29 | 2014-08-29 | 13 |
| 32 | 10.1.3.3.2 | **Design System (Pack)** | 22d | 2014-08-30 | 2014-09-21 | 31 |
| 33 |  | Choose Battery | 8d | 2014-08-30 | 2014-09-07 | 31 |
| 34 |  | design Pack | 14d | 2014-09-08 | 2014-09-21 | 33 |
| 35 | 10.1.3.3.3 | **Build (Pack)** | 65d | 2014-09-22 | 2014-11-28 | 32 |
| 36 |  | Purchase Battery | 7d | 2014-09-22 | 2014-09-28 | 32 |
| 37 |  | Recieve Battery | 14d | 2014-09-29 | 2014-10-12 | 36 |
| 38 |  | Test Cells | 14d | 2014-10-14 | 2014-10-27 | 37 |
| 39 |  | Module | 30d | 2014-10-28 | 2014-11-28 | 37, 38 |
| 40 |  | Sense Wiring | 30d | 2014-10-14 | 2014-11-13 | 37 |
| 41 |  | HV bussing | 30d | 2014-10-14 | 2014-11-13 | 37 |
| 42 |  | Gearing/Final Drive | 7d | 2014-10-30 | 2014-11-05 | 13, 15, 22 |
| 43 |  | Cooling | 30d | 2014-10-30 | 2014-11-30 | 13, 15, 22 |
| 44 | 10.1.4 | **Integration Testing (Powertrain)** | 142d | 2014-12-01 | 2015-04-25 | 14 |
| 45 |  | Test Motor with Controller | 60d | 2014-12-01 | 2015-02-01 | 14 |
| 46 |  | Test Battery with BMS | 30d | 2015-02-25 | 2015-03-26 | 14, 126 |
| 47 |  | Test Full Powertrain On Dyno | 30d | 2015-03-27 | 2015-04-25 | 45, 46 |
| 48 | 10.2 | **Chassis** | 181d | 2014-07-20 | 2015-01-23 | 9 |
| 49 |  | Define Requirements (Chassis) | 31d | 2014-07-20 | 2014-08-19 | 9 |
| 50 |  | Design System (Chassis) | 11d | 2014-08-20 | 2014-08-30 | 49 |
| 51 | 10.2.3 | **Build (Chassis)** | 137d | 2014-08-31 | 2015-01-21 |  |
| 52 | 10.2.3.1 | **Frame** | 137d | 2014-08-31 | 2015-01-21 | 50 |
| 53 |  | Define Requirements(Frame) | 1d | 2014-08-31 | 2014-08-31 | 50 |
| 54 | 10.2.3.1.2 | **Design (Frame)** | 20d | 2014-09-02 | 2014-09-21 | 53 |
| 55 |  | Select Frame | 6d | 2014-09-02 | 2014-09-07 |  |
| 56 |  | Get Frame CAD | 14d | 2014-09-08 | 2014-09-21 | 55 |
| 57 | 10.2.3.1.3 | **Build (Frame)** | 116d | 2014-09-22 | 2015-01-21 | 54 |
| 58 |  | Purchase Frame | 14d | 2014-09-22 | 2014-10-05 | 56 |
| 59 |  | Assemble rolling Chassis | 14d | 2014-10-06 | 2014-10-20 | 58 |
| 60 |  | Assign Chasis Volume | 14d | 2014-10-21 | 2014-11-03 | 59 |
| 61 |  | Place Components | 14d | 2014-11-04 | 2014-11-18 | 60 |
| 62 |  | CAD Full Vehicle | 30d | 2014-11-19 | 2014-12-19 | 61 |
| 63 |  | Do required rolling Chassis Maintienance | 30d | 2014-12-20 | 2015-01-21 | 62 |
| 64 | 10.2.3.2 | **Mounting Hardware** | 88d | 2014-08-31 | 2014-11-30 | 50 |
| 65 |  | Design Requirements (Mounting) | 14d | 2014-08-31 | 2014-09-14 | 50 |
| 66 |  | Design (Mounting) | 7d | 2014-09-15 | 2014-09-21 | 65 |
| 67 | 10.2.3.2.3 | **Build (Mounting)** | 67d | 2014-09-22 | 2014-11-30 | 66 |
| 68 | 10.2.3.2.3.1 | **Battery Frame** | 67d | 2014-09-22 | 2014-11-30 |  |
| 69 |  | Define Requirements (Battery Frame) | 7d | 2014-09-22 | 2014-09-28 | 34, 66 |
| 70 |  | Design (Battery Frame) | 30d | 2014-09-29 | 2014-10-29 | 69 |

| ID | WBS | Task | Duration | Start | Finish | Predecessors | Complete |
| --- | --- | --- | --- | --- | --- | --- | --- |
| 71 |  | Build (Battery frame) | 30d | 2014-10-30 | 2014-11-30 | 70 |  |
| 72 | 10.2.3.2.3.2 | **Motor Mount** | 51d | 2014-09-22 | 2014-11-13 |  |  |
| 73 |  | Define Requirements (Motor Mount) | 7d | 2014-09-22 | 2014-09-28 | 18, 66 |  |
| 74 |  | Design (Motor Mount) | 14d | 2014-09-29 | 2014-10-12 | 73 |  |
| 75 |  | Build (Motor Mount) | 30d | 2014-10-14 | 2014-11-13 | 74 |  |
| 76 | 10.2.3.2.3.3 | **Controller Mount** | 51d | 2014-09-22 | 2014-11-13 |  |  |
| 77 |  | Define Requirements (Controller Mount) | 7d | 2014-09-22 | 2014-09-28 | 25, 66 |  |
| 78 |  | Design (Controller Mount) | 14d | 2014-09-29 | 2014-10-12 | 77 |  |
| 79 |  | Build (Controller Mount) | 30d | 2014-10-14 | 2014-11-13 | 78 |  |
| 80 | 10.2.3.2.3.4 | **Fairing Mount** | 35d | 2014-09-22 | 2014-10-27 |  |  |
| 81 |  | Define Requirements (Fairing Mount) | 7d | 2014-09-22 | 2014-09-28 | 66 |  |
| 82 |  | Design (Fairing Mount) | 14d | 2014-09-29 | 2014-10-12 | 81 |  |
| 83 |  | Build (Fairing Mount) | 14d | 2014-10-14 | 2014-10-27 | 82 |  |
| 84 | 10.2.3.3 | **Suspension and Brakes** | 65d | 2014-08-31 | 2014-11-05 | 50 |  |
| 85 |  | Define Requirements (S and B) | 14d | 2014-08-31 | 2014-09-14 | 50 |  |
| 86 | 10.2.3.3.2 | **Design (S and B)** | 14d | 2014-09-15 | 2014-09-28 | 85 |  |
| 87 |  | Chose Suspension | 14d | 2014-09-15 | 2014-09-28 | 85 |  |
| 88 |  | Chose Brakes | 14d | 2014-09-15 | 2014-09-28 | 85 |  |
| 89 | 10.2.3.3.3 | **Build (S and B)** | 37d | 2014-09-29 | 2014-11-05 | 86 |  |
| 90 |  | Purchase Suspendsion Components | 7d | 2014-09-29 | 2014-10-05 | 85, 86 |  |
| 91 |  | Do Suspension work | 30d | 2014-10-06 | 2014-11-05 | 86, 90 |  |
| 92 |  | Purchase Brakes | 7d | 2014-09-29 | 2014-10-05 | 86 |  |
| 93 | 10.2.4 | **Integration Test (Chassis)** | 2d | 2015-01-22 | 2015-01-23 | 51, 52, 64, 84 |  |
| 94 |  | Suspension Install | 1d | 2015-01-22 | 2015-01-22 | 51 |  |
| 95 |  | Brakes Installed | 1d | 2015-01-22 | 2015-01-22 | 51 |  |
| 96 |  | Check for interference | 1d | 2015-01-23 | 2015-01-23 | 94, 95 |  |
| 97 | 10.3 | **Aerodynamics** | 260d | 2014-07-20 | 2015-04-13 | 9 |  |
| 98 |  | Define Requirements (Aero) | 44d | 2014-07-20 | 2014-09-02 | 9 |  |
| 99 | 10.3.2 | **Design System (Aero)** | 111d | 2014-09-03 | 2014-12-26 | 98 |  |
| 100 |  | Define Fairing Bounding Volume and Shape | 30d | 2014-09-03 | 2014-10-02 |  |  |
| 101 |  | Design Fairing | 30d | 2014-10-03 | 2014-11-02 | 100 |  |
| 102 |  | CAD Fairing | 30d | 2014-11-03 | 2014-12-04 | 81, 101 |  |
| 103 |  | Decide Fairing Material | 7d | 2014-12-05 | 2014-12-11 | 102 |  |
| 104 |  | Purchase Fairing components | 14d | 2014-12-12 | 2014-12-26 | 103 |  |
| 105 | 10.3.3 | **Build (Aero)** | 75d | 2014-12-27 | 2015-03-14 | 99 |  |
| 106 |  | Build Models | 30d | 2014-12-27 | 2015-01-27 | 104 |  |
| 107 |  | Build Fairing | 45d | 2015-01-28 | 2015-03-14 | 106 |  |
| 108 | 10.3.4 | **Integration Testing (Aero)** | 30d | 2015-03-15 | 2015-04-13 | 105 |  |
| 109 |  | Simulate to determin CdA and Airflow | 30d | 2015-03-15 | 2015-04-13 | 107 |  |
| 110 | 10.4 | **Electronics** | 302d | 2014-07-20 | 2015-05-26 | 9 |  |
| 111 |  | Define Requirements (Electronics) | 43d | 2014-07-20 | 2014-08-31 | 9 |  |
| 112 | 10.4.2 | **Design (Electronics)** | 49d | 2014-09-02 | 2014-10-21 | 111 |  |
| 113 |  | Define subcomponents | 1d | 2014-09-02 | 2014-09-02 | 111 |  |
| 114 |  | Define connectors | 7d | 2014-09-02 | 2014-09-08 | 111 |  |
| 115 |  | Define Data Bus | 7d | 2014-09-02 | 2014-09-08 | 111 |  |
| 116 |  | Design Critiical | 14d | 2014-09-09 | 2014-09-22 | 115 |  |
| 117 |  | Design All | 14d | 2014-09-23 | 2014-10-06 | 116 |  |
| 118 |  | Design all Software | 14d | 2014-10-07 | 2014-10-21 | 115, 117 |  |
| 119 |  | Define Dimensions of all hardware | 14d | 2014-10-07 | 2014-10-21 | 113, 114, 117 |  |
| 120 | 10.4.3 | **Buid (Electronics)** | 150d | 2014-10-22 | 2015-03-26 | 112 |  |
| 121 | 10.4.3.1 | **Critiical** | 120d | 2014-10-22 | 2015-02-24 | 112 |  |
| 122 |  | Datalogging | 1d | 2014-10-22 | 2014-10-22 | 112 |  |
| 123 |  | Low Voltaage Power | 1d | 2014-10-22 | 2014-10-22 | 112 |  |
| 124 |  | High Voltage Switching | 1d | 2014-10-22 | 2014-10-22 | 112 |  |
| 125 |  | Traction Control | 1d | 2014-10-22 | 2014-10-22 | 112 |  |
| 126 |  | Battery Managment system | 120d | 2014-10-22 | 2015-02-24 | 112 |  |
| 127 |  | Charging | 1d | 2014-10-22 | 2014-10-22 | 112 |  |
| 128 |  | Wiring harness | 1d | 2014-10-22 | 2014-10-22 | 112 |  |
| 129 |  | Build all Other | 30d | 2015-02-25 | 2015-03-26 | 112, 121 |  |
| 130 |  | Write Software | 129d | 2014-10-22 | 2015-03-05 | 112 |  |
| 131 | 10.4.4 | **Integration Testing** | 60d | 2015-03-27 | 2015-05-26 | 120 |  |
| 132 |  | Software Testing | 30d | 2015-03-27 | 2015-04-25 | 120 | 1% |
| 133 |  | Unit Testing Critical | 30d | 2015-03-27 | 2015-04-25 | 120 |  |
| 134 |  | Full Electrical testing | 30d | 2015-04-26 | 2015-05-26 | 120, 133 |  |
| 135 |  | Mount Powertrain | 7d | 2015-04-26 | 2015-05-02 | 11 |  |
| 136 |  | Mount Electronics | 14d | 2015-05-03 | 2015-05-16 | 135 |  |
| 137 |  | Assemble Full Vehicle | 14d | 2015-05-17 | 2015-05-31 | 48, 97, 135, 136 |  |
| 138 | 11 | **Integration Testing (RW-3)** | 52d | 2015-06-01 | 2015-07-23 | 10 |  |
| 139 |  | First Spin | 7d | 2015-06-01 | 2015-06-07 | 10 |  |
| 140 |  | Vehicle Dyno Testing | 15d | 2015-06-08 | 2015-06-22 | 139 |  |

| ID | Task | Duration | Start | Finish | Predecessors |
| --- | --- | --- | --- | --- | --- |
| 141 | Vehicle Road Testing | 30d | 2015-06-23 | 2015-07-23 | 140 |

## Version 2 (saved 2014-09-01)

Note of the change: after meeting 9/1

Last finish 2015-07-23 → 2015-06-28 (-25d).

Added:

| ID | Task | Duration | Start | Finish | Predecessors |
| --- | --- | --- | --- | --- | --- |
| 58 | CAD rolling chassis | 14d | 2014-09-23 | 2014-10-06 | 57 |
| 60 | Frame inspection | 30d | 2014-10-07 | 2014-11-06 | 54 |
| 77 | Check CAD for interference | 7d | 2015-01-11 | 2015-01-17 | 67 |
| 103 | Paint Fairings | 7d | 2015-02-15 | 2015-02-22 | 102 |

Removed: 62 CAD Full Vehicle; 68 Battery Frame; 72 Motor Mount; 76 Controller Mount; 80 Fairing Mount; 94 Suspension Install; 96 Check for interference; 102 CAD Fairing; 108 Integration Testing (Aero); 109 Simulate to determin CdA and Airflow

Changed:

| ID | Task | Start | Finish | Duration | Predecessors | Other |
| --- | --- | --- | --- | --- | --- | --- |
| 10 | **Build (RW-3)** |  | 2015-05-31 → 2015-04-27 (-34d) | 307d → 274d |  |  |
| 11 | **Powertrain** |  | 2015-04-25 → 2015-03-07 (-49d) | 272d → 223d |  |  |
| 14 | **Build (Powertrain)** |  | 2014-11-30 → 2015-02-08 (+70d) | 90d → 157d |  |  |
| 15 | **Motor** |  | 2014-09-28 → 2014-11-07 (+40d) | 30d → 69d |  |  |
| 19 | **Build (Motor)** |  | 2014-09-28 → 2014-11-07 (+40d) | 21d → 60d |  |  |
| 20 | Purchase Motor |  | 2014-09-14 → 2014-10-07 (+23d) | 7d → 30d |  |  |
| 21 | Recieve Motor | 2014-09-15 → 2014-10-08 (+23d) | 2014-09-28 → 2014-11-07 (+40d) | 14d → 30d |  |  |
| 22 | **Motor Controller** |  | 2014-10-29 → 2014-12-09 (+41d) | 60d → 99d |  |  |
| 26 | **Build (M/C)** |  | 2014-10-29 → 2014-12-09 (+41d) | 51d → 90d |  |  |
| 27 | Purchase Controller |  | 2014-09-14 → 2014-10-07 (+23d) | 7d → 30d |  |  |
| 28 | Recieve Controller | 2014-09-15 → 2014-10-08 (+23d) | 2014-09-28 → 2014-11-07 (+40d) | 14d → 30d |  |  |
| 29 | Configure Controller to Motor | 2014-09-29 → 2014-11-08 (+40d) | 2014-10-29 → 2014-12-09 (+41d) |  | 28 → 21, 28 |  |
| 30 | **Pack** |  | 2014-11-28 → 2015-02-08 (+72d) | 88d → 157d |  |  |
| 34 | Design Pack |  |  |  |  | was named design Pack |
| 35 | **Build (Pack)** |  | 2014-11-28 → 2015-02-08 (+72d) | 65d → 134d |  |  |
| 36 | Purchase Battery |  | 2014-09-28 → 2014-10-22 (+24d) | 7d → 30d |  |  |
| 37 | Recieve Battery | 2014-09-29 → 2014-10-23 (+24d) | 2014-10-12 → 2014-11-22 (+41d) | 14d → 30d |  |  |
| 38 | Test Cells | 2014-10-14 → 2014-11-23 (+40d) | 2014-10-27 → 2014-12-07 (+41d) |  |  |  |
| 39 | Module | 2014-10-28 → 2014-12-08 (+41d) | 2014-11-28 → 2015-02-08 (+72d) | 30d → 60d |  |  |
| 40 | Sense Wiring | 2014-10-14 → 2014-11-23 (+40d) | 2014-11-13 → 2015-01-25 (+73d) | 30d → 60d | 37 → 37, 110 |  |
| 41 | HV bussing | 2014-10-14 → 2014-11-23 (+40d) | 2014-11-13 → 2015-01-25 (+73d) | 30d → 60d |  |  |
| 42 | Final Drive Design | 2014-10-30 → 2014-09-08 (-52d) | 2014-11-05 → 2014-10-07 (-29d) | 7d → 30d | 13, 15, 22 → 13, 18, 25 | was named Gearing/Final Drive |
| 43 | Cooling | 2014-10-30 → 2014-09-08 (-52d) | 2014-11-30 → 2014-10-07 (-54d) |  | 13, 15, 22 → 13, 18, 25 |  |
| 44 | **Integration Testing (Powertrain)** | 2014-12-01 → 2014-12-10 (+9d) | 2015-04-25 → 2015-03-07 (-49d) | 142d → 84d | 14 → none |  |
| 45 | Test Motor with Controller | 2014-12-01 → 2014-12-10 (+9d) | 2015-02-01 → 2015-02-10 (+9d) |  | 14 → 29, 43 |  |
| 46 | Test Battery with BMS | 2015-02-25 → 2015-02-04 (-21d) | 2015-03-26 → 2015-03-06 (-20d) |  | 14, 120 → 120 |  |
| 47 | Test Full Powertrain On Dyno [not needed] | 2015-03-27 → 2015-03-07 (-20d) | 2015-04-25 → 2015-03-07 (-49d) | 30d → 1d | 45, 46 → 14, 45, 46 | was named Test Full Powertrain On Dyno |
| 48 | **Chassis** |  | 2015-01-23 → 2015-03-20 (+56d) | 181d → 236d |  |  |
| 51 | **Build (Chassis)** |  | 2015-01-21 → 2015-02-18 (+28d) | 137d → 164d |  |  |
| 52 | **Frame** |  | 2015-01-21 → 2014-12-22 (-30d) | 137d → 110d |  |  |
| 54 | **Design (Frame)** |  | 2014-09-21 → 2014-10-06 (+15d) | 20d → 35d |  |  |
| 55 | Select Frame |  | 2014-09-07 → 2014-09-08 (+1d) | 6d → 7d |  |  |
| 56 | Purchase Frame | 2014-09-22 → 2014-09-09 (-13d) | 2014-10-05 → 2014-09-22 (-13d) |  | 57 → 55 |  |
| 57 | Get Frame CAD | 2014-09-08 → 2014-09-09 (+1d) | 2014-09-21 → 2014-09-22 (+1d) |  |  |  |
| 59 | **Build (Frame)** | 2014-09-22 → 2014-10-07 (+15d) | 2015-01-21 → 2014-12-22 (-30d) | 116d → 74d |  |  |
| 61 | Assemble rolling Chassis | 2014-10-06 → 2014-11-07 (+32d) | 2014-10-20 → 2014-11-21 (+32d) |  | 56 → 56, 60 |  |
| 62 | Assign Chasis Volume | 2014-10-21 → 2014-10-07 (-14d) | 2014-11-03 → 2014-10-14 (-20d) | 14d → 7d | 61 → 57, 58 |  |
| 63 | Place Components [delete] | 2014-11-04 → 2014-10-15 (-20d) | 2014-11-18 → 2014-10-15 (-34d) | 14d → 1d |  | was named Place Components |
| 64 | Do required rolling Chassis Maintienance | 2014-12-20 → 2014-11-22 (-28d) | 2015-01-21 → 2014-12-22 (-30d) |  | CAD Full Vehicle → 61 |  |
| 65 | **Mounting Hardware** | 2014-08-31 → 2014-10-15 (+45d) | 2014-11-30 → 2015-02-18 (+80d) | 88d → 121d | 50 → 50, 62 |  |
| 66 | Design Requirements (Mounting) | 2014-08-31 → 2014-10-15 (+45d) | 2014-09-14 → 2014-10-28 (+44d) |  |  |  |
| 67 | **Design (Mounting)** | 2014-09-15 → 2014-11-22 (+68d) | 2014-09-21 → 2015-01-10 (+111d) | 7d → 47d | 66 → 66, 98 |  |
| 68 | Define Requirements (Battery Frame) | 2014-09-22 → 2014-11-22 (+61d) | 2014-09-28 → 2014-11-29 (+62d) |  | 34, 67 → 34, 66 |  |
| 69 | Design (Battery Frame) | 2014-09-29 → 2014-11-30 (+62d) | 2014-10-29 → 2015-01-10 (+73d) | 30d → 40d |  |  |
| 70 | Define Requirements (Motor Mount) | 2014-09-22 → 2014-11-22 (+61d) | 2014-09-28 → 2014-11-29 (+62d) |  | 18, 67 → 18, 66 |  |
| 71 | Design (Motor Mount) | 2014-09-29 → 2014-11-30 (+62d) | 2014-10-12 → 2015-01-10 (+90d) | 14d → 40d |  |  |
| 72 | Define Requirements (Controller Mount) | 2014-09-22 → 2014-11-22 (+61d) | 2014-09-28 → 2014-11-29 (+62d) |  | 25, 67 → 25, 66 |  |
| 73 | Design (Controller Mount) | 2014-09-29 → 2014-11-30 (+62d) | 2014-10-12 → 2015-01-10 (+90d) | 14d → 40d |  |  |
| 74 | Define Requirements (Fairing Mount) | 2014-09-22 → 2014-11-22 (+61d) | 2014-09-28 → 2014-11-29 (+62d) |  | 67 → 66 |  |
| 75 | Design (Fairing Mount) | 2014-09-29 → 2014-11-30 (+62d) | 2014-10-12 → 2014-12-13 (+62d) |  | 74 → 74, 98 |  |
| 76 | **Build (Mounting)** | 2014-09-22 → 2015-01-11 (+111d) | 2014-11-30 → 2015-02-18 (+80d) | 67d → 37d |  |  |
| 78 | Build (Battery frame) | 2014-10-30 → 2015-01-18 (+80d) | 2014-11-30 → 2015-02-18 (+80d) |  | 69 → 69, 77 |  |
| 79 | Build (Motor Mount) | 2014-10-14 → 2015-01-18 (+96d) | 2014-11-13 → 2015-02-18 (+97d) |  | 71 → 71, 77 |  |
| 80 | Build (Controller Mount) | 2014-10-14 → 2015-01-18 (+96d) | 2014-11-13 → 2015-02-18 (+97d) |  | 73 → 73, 77 |  |
| 81 | Build (Fairing Mount) | 2014-10-14 → 2015-01-18 (+96d) | 2014-10-27 → 2015-02-18 (+114d) | 14d → 30d | 75 → 75, 77 |  |
| 82 | **Suspension and Brakes** |  | 2014-11-05 → 2014-10-29 (-7d) | 65d → 58d |  |  |
| 84 | **Design (S and B)** |  | 2014-09-28 → 2014-10-29 (+31d) | 14d → 44d |  |  |
| 85 | Choose Suspension |  |  |  |  | was named Chose Suspension |
| 86 | Choose Brakes |  |  |  |  | was named Chose Brakes |
| 87 | Purchase Suspendsion Components |  | 2014-10-05 → 2014-10-29 (+24d) | 7d → 30d | 83, 84 → 85 |  |
| 88 | Purchase Brakes |  | 2014-10-05 → 2014-10-29 (+24d) | 7d → 30d | 84 → 86 |  |
| 89 | **Build (S and B)** | 2014-09-29 → 2015-01-11 (+104d) | 2014-11-05 → 2015-02-10 (+97d) | 37d → 30d | 84 → none |  |
| 90 | Suspension Testing and Tunning | 2014-10-06 → 2015-01-11 (+97d) | 2014-11-05 → 2015-02-10 (+97d) |  | 84, 87 → 67 | was named Do Suspension work |
| 91 | **Integration Test (Chassis)** | 2015-01-22 → 2015-02-19 (+28d) | 2015-01-23 → 2015-03-20 (+56d) | 2d → 30d |  |  |
| 92 | Test Fit mounting hardware | 2015-01-22 → 2015-02-19 (+28d) | 2015-01-22 → 2015-03-20 (+57d) | 1d → 30d |  | was named Brakes Installed |
| 93 | **Aerodynamics** |  | 2015-04-13 → 2015-02-22 (-50d) | 260d → 210d |  |  |
| 95 | **Design System (Aero)** |  | 2014-12-26 → 2014-12-13 (-13d) | 111d → 99d |  |  |
| 96 | Decide Fairing Material | 2014-12-05 → 2014-09-03 (-93d) | 2014-12-11 → 2014-09-09 (-93d) |  | CAD Fairing → 94 |  |
| 97 | Define Fairing Bounding Volume and Shape | 2014-09-03 → 2014-10-15 (+42d) | 2014-10-02 → 2014-10-21 (+19d) | 30d → 7d | none → 62 |  |
| 98 | Design and CAD Fairing | 2014-10-03 → 2014-10-22 (+19d) | 2014-11-02 → 2014-11-21 (+19d) |  |  | was named Design Fairing |

| ID | Task | Start | Finish | Duration | Predecessors | Other |
| --- | --- | --- | --- | --- | --- | --- |
| 99 | Purchase Fairing components | 2014-12-12 → 2014-11-22 (-20d) | 2014-12-26 → 2014-12-13 (-13d) | 14d → 21d | 96 → 96, 98 |  |
| 100 | **Build (Aero)** | 2014-12-27 → 2014-12-14 (-13d) | 2015-03-14 → 2015-02-22 (-20d) | 75d → 67d |  |  |
| 101 | Build Molds | 2014-12-27 → 2014-12-14 (-13d) | 2015-01-27 → 2015-01-14 (-13d) |  |  | was named Build Models |
| 102 | Build Fairings | 2015-01-28 → 2015-01-15 (-13d) | 2015-03-14 → 2015-02-14 (-28d) | 45d → 30d |  | was named Build Fairing |
| 104 | **Electronics** |  | 2015-05-26 → 2015-04-06 (-50d) | 302d → 253d |  |  |
| 110 | Design Critiical |  | 2014-09-22 → 2014-09-15 (-7d) | 14d → 7d |  |  |
| 111 | Design Non-Critical | 2014-09-23 → 2014-09-16 (-7d) | 2014-10-06 → 2014-09-22 (-14d) | 14d → 7d |  | was named Design All |
| 112 | Design all Software | 2014-10-07 → 2014-09-23 (-14d) | 2014-10-21 → 2014-09-29 (-22d) | 14d → 7d |  |  |
| 113 | Define Dimensions of all hardware | 2014-10-07 → 2014-10-15 (+8d) |  | 14d → 7d | 107, 108, 111 → 62, 107, 108, 111 |  |
| 114 | **Buid (Electronics)** |  | 2015-03-26 → 2015-02-04 (-50d) | 150d → 101d |  |  |
| 115 | **Critiical** |  | 2015-02-24 → 2015-02-03 (-21d) | 120d → 100d |  |  |
| 116 | Datalogging |  | 2014-10-22 → 2015-02-03 (+104d) | 1d → 100d |  |  |
| 117 | Low Voltaage Power |  | 2014-10-22 → 2014-12-22 (+61d) | 1d → 60d |  |  |
| 118 | High Voltage Switching |  | 2014-10-22 → 2014-12-22 (+61d) | 1d → 60d |  |  |
| 119 | Traction Control |  | 2014-10-22 → 2015-02-03 (+104d) | 1d → 100d |  |  |
| 120 | Battery Managment system |  | 2015-02-24 → 2015-02-03 (-21d) | 120d → 100d |  |  |
| 121 | Charging |  | 2014-10-22 → 2014-12-22 (+61d) | 1d → 60d |  |  |
| 122 | Wiring harness |  | 2014-10-22 → 2014-12-22 (+61d) | 1d → 60d |  |  |
| 123 | Build all Other | 2015-02-25 → 2015-02-04 (-21d) | 2015-03-26 → 2015-02-04 (-50d) | 30d → 1d |  |  |
| 124 | Write Software |  | 2015-03-05 → 2015-02-03 (-30d) | 129d → 100d |  |  |
| 125 | **Integration Testing (Electronics)** | 2015-03-27 → 2015-02-05 (-50d) | 2015-05-26 → 2015-04-06 (-50d) |  |  | was named Integration Testing |
| 126 | Software Testing | 2015-03-27 → 2015-02-05 (-50d) | 2015-04-25 → 2015-03-07 (-49d) |  |  |  |
| 127 | Unit Testing Critical | 2015-03-27 → 2015-02-05 (-50d) | 2015-04-25 → 2015-03-07 (-49d) |  |  |  |
| 128 | Full Electrical testing | 2015-04-26 → 2015-03-08 (-49d) | 2015-05-26 → 2015-04-06 (-50d) |  |  |  |
| 129 | Mount Powertrain | 2015-04-26 → 2015-03-08 (-49d) | 2015-05-02 → 2015-03-28 (-35d) | 7d → 21d |  |  |
| 130 | Mount Electronics | 2015-05-03 → 2015-04-07 (-26d) | 2015-05-16 → 2015-04-13 (-33d) | 14d → 7d | 129 → 104, 129 |  |
| 131 | Assemble Full Vehicle | 2015-05-17 → 2015-04-14 (-33d) | 2015-05-31 → 2015-04-27 (-34d) |  |  |  |
| 132 | **Integration Testing (RW-3)** | 2015-06-01 → 2015-04-28 (-34d) | 2015-07-23 → 2015-06-19 (-34d) |  |  |  |
| 133 | First Spin | 2015-06-01 → 2015-04-28 (-34d) | 2015-06-07 → 2015-05-04 (-34d) |  |  |  |
| 134 | Vehicle Dyno Testing | 2015-06-08 → 2015-05-05 (-34d) | 2015-06-22 → 2015-05-19 (-34d) |  |  |  |
| 135 | Vehicle Road Testing | 2015-06-23 → 2015-05-20 (-34d) | 2015-07-23 → 2015-06-19 (-34d) |  |  |  |

## Version 3 (saved 2014-09-03)

Note of the change: Pre-electrical update

Last finish stays 2015-06-28.

Changed:

| ID | Task | Finish | Duration |
| --- | --- | --- | --- |
| 82 | **Suspension and Brakes** | 2014-10-29 → 2015-02-10 (+104d) | 58d → 157d |
